# SmartTouchCRM V 1.0 - 04182014

Schedule from MS Project, 2013-10-01 to 2014-10-24, status date 2013-10-01, A marks actual dates.

## Calendars

- Standard: Mon-Fri 08:00-12:00, 13:00-17:00; Sat-Sun off.

## Resources

| Resource |
| --- |
| Ashok |
| Hari Pratap |

## Schedule

| ID | WBS | Task | Duration | Start | Finish | Complete | Constraint | Work | Actual work |
| --- | --- | --- | --- | --- | --- | --- | --- | --- | --- |
| 1 | 1 | **Product Planning Phase** | 45.12d | 2013-10-01 A | 2013-12-03 A | 100% |  | 564h | 564h |
| 2 | 1.1 | **Product Initiation Process** | 17d | 2013-10-01 A | 2013-10-23 A | 100% |  | 91h | 91h |
| 3 | 1.1.1 | Project proposal as needed and submit for final approval | 4.38d | 2013-10-01 A | 2013-10-07 A | 100% | start no earlier than 2013-10-01 | 25h | 25h |
| 4 | 1.1.2 | Core Team Joining - Business Overview Meetings | 6d | 2013-10-09 A | 2013-10-16 A | 100% | start no earlier than 2013-10-09 | 20h | 20h |
| 5 | 1.1.3 | Product Kickoff Meeting | 1d | 2013-10-17 A | 2013-10-17 A | 100% | start no earlier than 2013-10-17 | 8h | 8h |
| 6 | 1.1.4 | Project business overview meetings by alan | 3d | 2013-10-18 A | 2013-10-22 A | 100% | start no earlier than 2013-10-18 | 30h | 30h |
| 7 | 1.1.5 | Revise project proposal as needed and submit for final approval | 1d | 2013-10-23 A | 2013-10-23 A | 100% | start no earlier than 2013-10-23 | 8h | 8h |
| 8 | 1.2 | **Project Start-up Processes** | 13d | 2013-10-24 A | 2013-11-12 A | 100% |  | 35h | 35h |
| 9 | 1.2.1 | Identify Team Members & Project Management | 7d | 2013-10-24 A | 2013-11-04 A | 100% | start no earlier than 2013-10-24 | 25h | 25h |
| 10 | 1.2.2 | Identify the basic Infrastructure needs (Software and Hardware) | 5d | 2013-11-05 A | 2013-11-12 A | 100% | start no earlier than 2013-11-05 | 10h | 10h |
| 11 | 1.3 | **Project Control/Reporting Processes** | 13.12d | 2013-10-28 A | 2013-11-14 A | 100% |  | 63h | 63h |
| 12 | 1.3.1 | Establish Change Control Process | 6.12d | 2013-10-28 A | 2013-11-05 A | 100% | start no earlier than 2013-10-28 | 25h | 25h |
| 13 | 1.3.2 | Establish Issue Management Process | 3.12d | 2013-11-05 A | 2013-11-08 A | 100% | start no earlier than 2013-11-05 | 28h | 28h |
| 14 | 1.3.3 | Establish Status Tracking and Reporting Process | 4.12d | 2013-11-08 A | 2013-11-14 A | 100% | start no earlier than 2013-11-08 | 10h | 10h |
| 15 | 1.4 | **Requirements Analysis Phase** | 22.88d | 2013-10-17 A | 2013-11-18 A | 100% |  | 112h | 112h |
| 16 | 1.4.1 | Map out current and future Technology/Business Plan (Big Picture) | 4.88d | 2013-10-17 A | 2013-10-23 A | 100% | start no earlier than 2013-10-17 | 25h | 25h |
| 17 | 1.4.2 | Meeting with Alan/Robert/Grant | 0.88d | 2013-10-18 A | 2013-10-18 A | 100% | start no earlier than 2013-10-18 | 8h | 8h |
| 18 | 1.4.3 | Competitive Analysis - Documentation and Key Features | 3.88d | 2013-10-22 A | 2013-10-25 A | 100% | start no earlier than 2013-10-22 | 20h | 20h |
| 19 | 1.4.4 | Review the CRM majors in detail - feature by feature | 3.88d | 2013-10-28 A | 2013-10-31 A | 100% | start no earlier than 2013-10-28 | 20h | 20h |
| 20 | 1.4.5 | Presentation of technology/business plan to project team | 0.88d | 2013-11-11 A | 2013-11-11 A | 100% | start no earlier than 2013-11-11 | 4h | 4h |
| 21 | 1.4.6 | Statement of business requirements, impacts and prioritization of initiatives | 2.88d | 2013-11-13 A | 2013-11-15 A | 100% | start no earlier than 2013-11-13 | 15h | 15h |
| 22 | 1.4.7 | Current systems review & gap analysis | 1.88d | 2013-11-15 A | 2013-11-18 A | 100% | start no earlier than 2013-11-15 | 20h | 20h |
| 23 | 1.5 | **Functional Requirements Document (FSD)** | 30.88d | 2013-10-17 A | 2013-11-28 A | 100% |  | 35h | 35h |
| 24 | 1.5.1 | Document FSD & Review FSD | 30.88d | 2013-10-17 A | 2013-11-28 A | 100% | start no earlier than 2013-10-17 | 20h | 20h |
| 25 | 1.5.2 | Review FSD & Modifications | 30.88d | 2013-10-17 A | 2013-11-28 A | 100% | start no earlier than 2013-10-17 | 15h | 15h |

Notes:
- 3: Team Members: Ashok
- 4: Team Members: Ashok, Hari, Bharath, Ravi, Siddarth, Ramana, Nagendra, Mahesh, Spandana
- 5: Team Members: All Team Memebers
- 6: Team Members: Ashok, Hari, Bharath, Ravi, Siddarth, Ramana, Nagendra, Mahesh, Spandana
- 7: Team Members: Ashok
- 9: Team Members: Hari,Ashok
- 10: Team Members: Hari, Bharath, Ashok,Ravi
- 12: Team Members: Hari
- 13: Team Members: Hari
- 14: Team Members: Hari,Ashok
- 16: Team Members: All Team Memebers
- 17: Team Members: All Team Memebers
- 18: Team Members: Hari, Ashok, Siddarth
- 19: Team Members: Hari, Ashok, Siddarth
- 20: Team Members: Bharath, Ashok
- 21: Team Members: Hari, Bharath, Ashok, Ramana, Ravi
- 22: Team Members: Hari, Ramana, Siddarth
- 24: Team Members: Hari, Ramana, Siddarth
- 25: Team Members: Hari, Ramana, Siddarth

| ID | WBS | Task | Duration | Start | Finish | Complete | Remaining | Total slack | Constraint | Work | Actual work | Team Members | Pending Hours |
| --- | --- | --- | --- | --- | --- | --- | --- | --- | --- | --- | --- | --- | --- |
| 26 | 1.6 | **Approval of the FSD by the steering committee (Stakeholders)** | 5d | 2013-11-26 A | 2013-12-03 A | 100% |  |  |  | 8h | 8h |  |  |
| 27 | 1.6.1 | Cost/Benefit/Risk Analysis - Complex features | 2d | 2013-11-26 A | 2013-11-28 A | 100% |  |  | start no earlier than 2013-11-26 | 4h | 4h | Hari, Ramana, Siddarth |  |
| 28 | 1.6.2 | Global Strategy/Competition - Multiple Verticals - Analysis | 2d | 2013-11-29 A | 2013-12-03 A | 100% |  |  | start no earlier than 2013-11-29 | 4h | 4h | Hari, Ramana, Siddarth |  |
| 29 | 1.7 | **Resource Grouping and Defining Roles** | 19.88d | 2013-10-04 A | 2013-10-31 A | 100% |  |  |  | 100h | 100h |  |  |
| 30 | 1.7.1 | Assemble internal and external teams to launch project | 0.88d | 2013-10-04 A | 2013-10-05 A | 100% |  |  | start no earlier than 2013-10-04 | 10h | 10h | Ashok, Hari, Ravi, Bharath, Nagendra |  |
| 31 | 1.7.2 | Assemble needed GUI and system design expertise | 3.88d | 2013-10-08 A | 2013-10-12 A | 100% |  |  | start no earlier than 2013-10-08 | 30h | 30h | Ashok, Nagendra |  |
| 32 | 1.7.3 | Assemble needed domain analyst & analyse requirements | 3.88d | 2013-10-15 A | 2013-10-18 A | 100% |  |  | start no earlier than 2013-10-15 | 30h | 30h | Ashok, Ramana, Siddarth, Hari |  |
| 33 | 1.7.4 | Assemble needed programming expertise | 5.88d | 2013-10-24 A | 2013-10-31 A | 100% |  |  | start no earlier than 2013-10-24 | 30h | 30h | Ashok, Ravi, Bharath, Sivateja, NM, Hari, Sri Krishna |  |
| 34 | 1.8 | **Development Infrastructure Set-up & Deployment Planning** | 17.88d | 2013-11-05 A | 2013-11-28 A | 100% |  |  |  | 120h | 120h |  |  |
| 35 | 1.8.1 | Identify tools, technical requirements and e-infrastructure | 7d | 2013-11-05 A | 2013-11-14 A | 100% |  |  | start no earlier than 2013-11-05 | 20h | 20h | Ashok, Bharath, NM, Ravi |  |
| 36 | 1.8.2 | MSDN & Visual studio licenses | 2d | 2013-11-22 A | 2013-11-26 A | 100% |  |  | start no earlier than 2013-11-22 | 2h | 2h | Ashok |  |
| 37 | 1.8.3 | Review needed technology application, hardware, software and network requirements | 3.88d | 2013-11-18 A | 2013-11-21 A | 100% |  |  | start no earlier than 2013-11-18 | 25h | 25h | Ashok, Bharath, NM, Ravi, Hari |  |
| 38 | 1.8.4 | Identify & Discuss Disparities between existing environment and recommended | 7.88d | 2013-11-11 A | 2013-11-20 A | 100% |  |  | start no earlier than 2013-11-11 | 4h | 4h | Ashok, Bharath, NM, Ravi, Hari |  |
| 39 | 1.8.5 | Design & document infra plans with scalability & availability options & projected growth | 4.88d | 2013-11-18 A | 2013-11-22 A | 100% |  |  | start no earlier than 2013-11-18 | 16h | 16h | Ashok, Bharath, NM, Ravi, Hari |  |
| 40 | 1.8.6 | Setup Development Environment | 2d | 2013-11-26 A | 2013-11-28 A | 100% |  |  | start no earlier than 2013-11-26 | 4h | 4h | Bharath, Hari, NM, Ravi, Kiran |  |
| 41 | 1.8.7 | Set up Development Workstations | 2d | 2013-11-26 A | 2013-11-28 A | 100% |  |  | start no earlier than 2013-11-26 | 4h | 4h | Kiran, Bharath |  |
| 42 | 1.8.8 | Install Visual Stuidio.Net, TFS, Dev tools & other needed applications | 7.88d | 2013-11-19 A | 2013-11-28 A | 100% |  |  | start no earlier than 2013-11-19 | 45h | 45h | Kiran, Bharath |  |
| 43 | 2 | **Product Implementation Phase** | 235d | 2013-10-25 A | 2014-09-19 | 43% | 134.37d | 25.59d |  | 13405h | 6299.99h |  |  |
| 44 | 2.1 | **Design / Review Module Moqups** | 38d | 2013-10-25 A | 2013-12-18 | 97% | 1.25d | 222.59d |  | 560h | 535h |  | 25 hrs |
| 45 | 2.1.1 | Contacts Module | 6.12d | 2013-10-25 A | 2013-11-04 A | 100% |  |  | start no earlier than 2013-10-25 | 60h | 60h | Nagendra, Spandana, Mahesh, Bharath, Ramana, Hari |  |
| 46 | 2.1.2 | Campaigns Module | 7.38d | 2013-11-01 A | 2013-11-12 A | 100% |  |  | start no earlier than 2013-11-01 | 60h | 60h | Nagendra, Spandana, Mahesh, Bharath, Ramana, Hari |  |
| 47 | 2.1.3 | Marketing Automation | 5.75d | 2013-11-12 A | 2013-11-19 A | 100% |  |  | start no earlier than 2013-11-12 | 75h | 75h | Nagendra, Spandana, Mahesh, Bharath, Ramana, Hari |  |
| 48 | 2.1.4 | Internet Forms / Lead Capture | 6.12d | 2013-11-12 A | 2013-11-20 A | 100% |  |  | start no earlier than 2013-11-12 | 45h | 45h | Nagendra, Spandana, Mahesh, Bharath, Ramana, Hari |  |
| 49 | 2.1.5 | Personal Settings | 6.12d | 2013-11-14 A | 2013-11-22 A | 100% |  |  | start no earlier than 2013-11-14 | 45h | 45h | Nagendra, Spandana, Mahesh, Bharath, Ramana, Hari |  |
| 50 | 2.1.6 | Account Admin Settings | 5.88d | 2013-11-21 A | 2013-11-28 A | 100% |  |  | start no earlier than 2013-11-21 | 45h | 45h | Nagendra, Spandana, Mahesh, Bharath, Ramana, Hari |  |
| 51 | 2.1.7 | Super Admin - Accounts Management | 2.88d | 2013-11-26 A | 2013-11-28 A | 100% |  |  | start no earlier than 2013-11-26 | 45h | 45h | Nagendra, Spandana, Mahesh, Bharath, Ramana, Hari |  |
| 52 | 2.1.8 | Account Dashboard | 3d | 2013-11-29 A | 2013-12-04 A | 100% |  |  | start no earlier than 2013-11-29 | 60h | 60h | Nagendra, Spandana, Mahesh, Bharath, Ramana, Hari |  |
| 53 | 2.1.9 | Reports | 6.12d | 2013-12-05 A | 2013-12-13 | 91% | 0.53d | 225.46d | start no earlier than 2013-12-05 | 75h | 70h | Nagendra, Spandana, Mahesh, Bharath, Ramana, Hari | 5 hrs |
| 54 | 2.1.10 | 3rd Party & External Components Integrations | 3d | 2013-12-13 A | 2013-12-18 | 60% | 1.2d | 222.59d | start no earlier than 2013-12-13 | 50h | 30h | Nagendra, Spandana, Mahesh, Bharath, Ramana, Hari | 20 hrs |

| ID | WBS | Task | Duration | Start | Finish | Predecessors | Complete | Remaining | Total slack | Free slack | Constraint | Work | Actual work | Pending Hours |
| --- | --- | --- | --- | --- | --- | --- | --- | --- | --- | --- | --- | --- | --- | --- |
| 55 | 2.2 | **Finalizing Prototypes & Interface Documents - Business Sign-off** | 47.84d | 2013-11-01 A | 2014-01-07 |  | 95% | 2.37d | 207.87d |  |  | 940h | 870h | 70 hrs |
| 56 | 2.2.1 | Contacts Module | 5.41d | 2013-11-01 A | 2013-11-08 A | 45 | 100% |  |  |  | start no earlier than 2013-11-01 | 80h | 80h |  |
| 57 | 2.2.2 | Campaigns Module | 6.08d | 2013-11-08 A | 2013-11-18 A | 56 | 100% |  |  |  | start no earlier than 2013-11-08 | 85h | 85h |  |
| 58 | 2.2.3 | Marketing Automation | 5.46d | 2013-11-15 A | 2013-11-22 A | 57 | 100% |  |  |  | start no earlier than 2013-11-15 | 100h | 100h |  |
| 59 | 2.2.4 | Internet Forms / Lead Capture | 5.66d | 2013-11-22 A | 2013-11-29 A | 58 | 100% |  |  |  | start no earlier than 2013-11-22 | 75h | 75h |  |
| 60 | 2.2.5 | Personal Settings | 8.01d | 2013-12-02 A | 2013-12-12 A | 59 | 100% |  |  |  | start no earlier than 2013-12-02 | 100h | 100h |  |
| 61 | 2.2.6 | Account Admin Settings | 8.04d | 2013-12-09 A | 2013-12-19 A | 60 | 100% |  |  |  | start no earlier than 2013-12-09 | 100h | 100h |  |
| 62 | 2.2.7 | Super Admin - Accounts Management | 5.47d | 2013-12-17 A | 2013-12-24 A | 61 | 100% |  |  |  | start no earlier than 2013-12-17 | 100h | 100h |  |
| 63 | 2.2.8 | Account Dashboard | 6.08d | 2013-12-20 A | 2013-12-30 A | 62 | 100% |  |  |  | start no earlier than 2013-12-20 | 90h | 90h |  |
| 64 | 2.2.9 | Reports | 7.45d | 2013-12-25 A | 2014-01-03 | 63 | 83% | 1.25d | 0.6d | 0d | start no earlier than 2013-12-25 | 110h | 100h | 10 hrs |
| 65 | 2.2.10 | 3rd Party & External Components Integrations | 3.85d | 2014-01-02 A | 2014-01-07 | 64 | 53% | 1.8d | 207.87d |  | start no earlier than 2014-01-02 | 100h | 40h | 60 hrs |
| 66 | 2.3 | **Development Design Plan** | 169d | 2013-11-08 A | 2014-07-03 |  | 14% | 146.12d | 81.59d |  |  | 770h | 725h | 40 hrs |
| 67 | 2.3.1 | Design and Document Solution Architecture. | 4d | 2013-11-20 A | 2013-11-26 |  | 72% | 1.12d | 238.59d |  | start no earlier than 2013-11-20 | 45h | 40h |  |
| 68 | 2.3.2 | Architectural Design Reviews & Technical Meetings | 8.38d | 2013-12-06 A | 2013-12-18 A |  | 100% |  |  |  | start no earlier than 2013-12-06 | 80h | 80h |  |
| 69 | 2.3.3 | Establishing Coding Guidelines and Developers Code Standards | 3.75d | 2013-11-14 A | 2013-11-19 A |  | 100% |  |  |  | start no earlier than 2013-11-14 | 60h | 60h |  |
| 70 | 2.3.4 | Design and Review Deployment Strategy | 3.88d | 2013-11-15 A | 2013-11-20 A |  | 100% |  |  |  | start no earlier than 2013-11-15 | 45h | 45h |  |
| 71 | 2.3.5 | Identify the Components for POC's and Validating Components | 160d | 2013-11-21 A | 2014-07-03 |  | 1% | 158.33d | 81.59d |  | finish no earlier than 2014-07-01 | 120h | 100h | 20 hrs |
| 72 | 2.3.6 | Design & Set-up Solution Foundation Framwork | 2.88d | 2013-11-26 A | 2013-11-28 A |  | 100% |  |  |  | start no earlier than 2013-11-26 | 75h | 75h |  |
| 73 | 2.3.7 | Architecture Guidelines Design, R&D on Tools and APIs. | 9.12d | 2013-12-03 A | 2013-12-16 A |  | 100% |  |  |  | start no earlier than 2013-12-03 | 80h | 80h |  |
| 74 | 2.3.8 | DB Architecture Design Review and Analysis | 142d | 2013-12-14 A | 2014-07-01 |  | 1% | 141.21d | 82.71d |  | finish no earlier than 2014-07-01 | 45h | 25h | 20 hrs |
| 75 | 2.3.9 | Application DB Schema Model Design Review | 3.88d | 2013-12-18 A | 2013-12-23 A |  | 100% |  |  |  | start no earlier than 2013-12-18 | 60h | 60h |  |
| 76 | 2.3.10 | Review DB Data Model Design Approaches & Establish DB Design Standards | 3.88d | 2013-12-24 A | 2013-12-27 A |  | 100% |  |  |  | start no earlier than 2013-12-24 | 75h | 75h |  |
| 77 | 2.3.11 | Review Requirements documents & Plan for Development | 3.12d | 2014-01-03 A | 2014-01-08 A |  | 100% |  |  |  | start no earlier than 2014-01-03 | 75h | 75h |  |
| 78 | 2.3.12 | Approval by project team of preliminary Solution design document | 2.88d | 2013-11-08 A | 2013-11-12 A |  | 100% |  |  |  | start no earlier than 2013-11-08 | 10h | 10h |  |

Notes:
- 56: Team Members: Nagendra, Spandana, Mahesh, Bharath, Ramana, Hari
- 57: Team Members: Nagendra, Spandana, Mahesh, Bharath, Ramana, Hari
- 58: Team Members: Nagendra, Spandana, Mahesh, Bharath, Ramana, Hari
- 59: Team Members: Nagendra, Spandana, Mahesh, Bharath, Ramana, Hari
- 60: Team Members: Nagendra, Spandana, Mahesh, Bharath, Ramana, Hari
- 61: Team Members: Nagendra, Spandana, Mahesh, Bharath, Ramana, Hari
- 62: Team Members: Nagendra, Spandana, Mahesh, Bharath, Ramana, Hari
- 63: Team Members: Nagendra, Spandana, Mahesh, Bharath, Ramana, Hari
- 64: Team Members: Nagendra, Spandana, Mahesh, Bharath, Ramana, Hari
- 65: Team Members: Nagendra, Spandana, Mahesh, Bharath, Ramana, Hari
- 67: Team Members: Bharath, Hari, NM, Ravi
- 68: Team Members: Ashok, Bharath, NM, Ravi
- 69: Team Members: Bharath, NM, Ravi
- 70: Team Members: Bharath, NM, Ravi, Hari, Ashok
- 71: Team Members: Bharath, NM, Ravi
- 72: Team Members: Bharath, Hari, NM, Ravi
- 73: Team Members: Bharath, NM, Ravi
- 74: Team Members: Bharath, NM, Ravi, Hari, Ashok
- 75: Team Members: Bharath, NM, Ravi, Hari, Ashok, Sri Krishna, Siva Teja
- 76: Team Members: Bharath, NM, Ravi, Hari, Ashok, Sri Krishna, Siva Teja
- 77: Team Members: Bharath, Hari, NM, Ravi
- 78: Team Members: Bharath, NM, Ravi, Hari, Ashok, Siva Teja, Sri Krishna, Mallikarjun

| ID | WBS | Task | Duration | Start | Finish | Predecessors | Complete | Remaining | Total slack | Constraint | Work | Actual work | Pending Hours | Team Members |
| --- | --- | --- | --- | --- | --- | --- | --- | --- | --- | --- | --- | --- | --- | --- |
| 79 | 2.4 | **QA Test Preparations & Planning** | 56.12d | 2013-11-05 A | 2014-01-22 |  | 86% | 7.78d | 197.46d |  | 490h | 370h | 120 hrs |  |
| 80 | 2.4.1 | Design & Document Test Strategy Plan | 7.88d | 2013-11-05 A | 2013-11-14 A |  | 100% |  |  | start no earlier than 2013-11-05 | 60h | 60h |  | Ramana, Promodh, Sankeerth, Mamata, Hari |
| 81 | 2.4.2 | Identify Scope for Test Cases and Review Interface Documents | 39.88d | 2013-11-12 A | 2014-01-06 A |  | 100% |  |  | start no earlier than 2013-11-12 | 45h | 45h |  | Ramana, Promodh, Sankeerth, Mamata, Hari |
| 82 | 2.4.3 | Document Test Cases for Final Signed-off Modules | 40.12d | 2013-11-12 A | 2014-01-07 |  | 72% | 11.32d | 208.46d | start no earlier than 2013-11-12 | 200h | 130h | 70 hrs | Ramana, Promodh, Sankeerth, Mamata, Hari |
| 83 | 2.4.4 | Review and Finalize Test Cases | 3.12d | 2014-01-07 A | 2014-01-10 |  | 22% | 2.43d | 205.46d | start no earlier than 2014-01-07 | 65h | 15h | 50 hrs | Ramana, Promodh, Sankeerth, Mamata, Hari |
| 84 | 2.4.5 | Identify & Define UI Test Guidelines | 3.12d | 2014-01-10 A | 2014-01-15 A |  | 100% |  |  | start no earlier than 2014-01-10 | 75h | 75h |  | Ramana, Promodh, Sankeerth, Mamata, Hari |
| 85 | 2.4.6 | Evaluate and Finlize on QA Load/Performance/ Stress Testing Tools | 5.12d | 2014-01-15 A | 2014-01-22 A |  | 100% |  |  | start no earlier than 2014-01-15 | 45h | 45h |  | Ramana, Promodh, Sankeerth, Mamata, Hari |
| 86 | 2.5 | **Application Designing & Development Preparation** | 41d | 2013-12-03 A | 2014-01-29 |  | 97% | 1.05d | 192.59d |  | 1065h | 1035h | 30 hrs |  |
| 87 | 2.5.1 | **SOA Practices** | 8.88d | 2013-12-03 A | 2013-12-13 A |  | 100% |  |  |  | 275h | 275h |  |  |
| 88 | 2.5.1.1 | Identify Repositories | 1.88d | 2013-12-03 A | 2013-12-04 A |  | 100% |  |  | start no earlier than 2013-12-03 | 45h | 45h |  | Bharath, NM, Ravi, Sivateja |
| 89 | 2.5.1.2 | Building Repositories for Accounts | 1.88d | 2013-12-04 A | 2013-12-05 A |  | 100% |  |  | start no earlier than 2013-12-04 | 75h | 75h |  | Bharath, NM, Ravi, Sivateja |
| 90 | 2.5.1.3 | Building Repositories for CRM Activities | 1.88d | 2013-12-04 A | 2013-12-05 A |  | 100% |  |  | start no earlier than 2013-12-04 | 75h | 75h |  | Bharath, NM, Ravi, Sivateja |
| 91 | 2.5.1.4 | DEV Testing of repositories. | 0.88d | 2013-12-06 A | 2013-12-07 A |  | 100% |  |  | start no earlier than 2013-12-06 | 30h | 30h |  | Bharath, NM, Ravi, Sivateja |
| 92 | 2.5.1.5 | Odata,Web API - Standard Library Design and Development | 3.88d | 2013-12-10 A | 2013-12-13 A |  | 100% |  |  | start no earlier than 2013-12-10 | 50h | 50h |  | Bharath, NM, Ravi, Sivateja |
| 93 | 2.5.2 | **Web UI Application Design Practices** | 10d | 2013-12-17 A | 2013-12-31 |  | 98% | 0.21d | 213.59d |  | 240h | 235h | 5 hrs |  |
| 94 | 2.5.2.1 | MVC,MVVM Architectural View - Model Design | 2.88d | 2013-12-17 A | 2013-12-19 A |  | 100% |  |  | start no earlier than 2013-12-17 | 60h | 60h |  | Bharath, NM, Ravi, Sivateja |
| 95 | 2.5.2.2 | Identify UI Components for Integration and Designing | 4d | 2013-12-18 A | 2013-12-24 A |  | 100% |  |  | start no earlier than 2013-12-18 | 80h | 80h |  | Bharath, NM, Ravi, Sivateja, Mahesh, Spandana |
| 96 | 2.5.2.3 | Kendo UI - Framwork Update and Integration | 5d | 2013-12-24 A | 2013-12-31 | 95 | 95% | 0.25d | 213.59d | start no earlier than 2013-12-24 | 100h | 95h | 5 hrs | Bharath, NM, Ravi, Sivateja, Mahesh, Spandana |
| 97 | 2.5.3 | **Client Side Libraries** | 7.88d | 2013-12-11 A | 2013-12-20 A |  | 100% |  |  |  | 225h | 225h |  |  |
| 98 | 2.5.3.1 | Identify Jquery Bundels | 2.88d | 2013-12-11 A | 2013-12-14 A |  | 100% |  |  | start no earlier than 2013-12-11 | 50h | 50h |  | Bharath, NM, Ravi, Sivateja, Mahesh, Spandana |
| 99 | 2.5.3.2 | Identify Scripts Essential | 2.88d | 2013-12-11 A | 2013-12-14 A |  | 100% |  |  | start no earlier than 2013-12-11 | 50h | 50h |  | Bharath, NM, Ravi, Sivateja, Mahesh, Spandana |
| 100 | 2.5.3.3 | Identify 3rd Party Components Required (Kendo UI, Knockout JS, Node JS) | 2.88d | 2013-12-11 A | 2013-12-14 A |  | 100% |  |  | start no earlier than 2013-12-11 | 75h | 75h |  | Bharath, NM, Ravi, Sivateja, Mahesh, Spandana |
| 101 | 2.5.3.4 | Creating Solution Library Plan | 1.88d | 2013-12-19 A | 2013-12-20 A |  | 100% |  |  | start no earlier than 2013-12-19 | 50h | 50h |  | Bharath, NM, Ravi, Sivateja |
| 102 | 2.5.4 | **Caching & Exception Logging** | 5.88d | 2014-01-02 A | 2014-01-09 A |  | 100% |  |  |  | 200h | 200h |  |  |
| 103 | 2.5.4.1 | Application Caching | 5.12d | 2014-01-02 A | 2014-01-09 A |  | 100% |  |  | start no earlier than 2014-01-02 | 125h | 125h |  | Bharath, NM, Ravi, Sivateja |
| 104 | 2.5.4.2 | Exception Handling & Logging | 5.88d | 2014-01-02 A | 2014-01-09 A |  | 100% |  |  | start no earlier than 2014-01-02 | 75h | 75h |  | Bharath, NM, Ravi, Sivateja |

| ID | WBS | Task | Duration | Start | Finish | Predecessors | Complete | Remaining | Total slack | Free slack | Constraint | Work | Actual work | Pending Hours | Team Members |
| --- | --- | --- | --- | --- | --- | --- | --- | --- | --- | --- | --- | --- | --- | --- | --- |
| 105 | 2.5.5 | **Application Security** | 5d | 2014-01-22 A | 2014-01-29 |  | 80% | 1d | 192.59d |  |  | 125h | 100h | 25 hrs |  |
| 106 | 2.5.5.1 | MembershipProvider for authentication & authorization | 5d | 2014-01-22 A | 2014-01-29 |  | 80% | 1d | 192.59d |  | start no earlier than 2014-01-22 | 125h | 100h | 25 hrs | Bharath, NM, Ravi, Sivateja |
| 107 | 2.6 | **Continuous Integration Setup** | 9d | 2013-12-21 A | 2014-01-02 A |  | 100% |  |  |  |  | 400h | 400h |  |  |
| 108 | 2.6.1 | TFS - Build Repositories Confirguration Set-up | 2d | 2013-12-21 A | 2013-12-24 A |  | 100% |  |  |  | start no earlier than 2013-12-21 | 50h | 50h |  | Bharath, NM, Kiran, Hari |
| 109 | 2.6.2 | Source Controller | 1.88d | 2013-12-26 A | 2013-12-28 A |  | 100% |  |  |  | start no earlier than 2013-12-26 | 100h | 100h |  | Bharath, NM, Kiran, Hari |
| 110 | 2.6.3 | Build Management | 2.88d | 2013-12-31 A | 2014-01-02 A |  | 100% |  |  |  | start no earlier than 2013-12-31 | 250h | 250h |  | Bharath, NM, Kiran, Hari |
| 111 | 2.7 | **Functional Development** | 174d | 2014-01-20 A | 2014-09-19 |  | 33% | 116.56d | 25.59d |  |  | 8575h | 2284.99h | 7090 hrs |  |
| 112 | 2.7.1 | **Design & Develop Contacts Module** | 24d | 2014-01-20 A | 2014-02-21 |  | 95% | 1.16d | 175.59d |  |  | 675h | 620h | 55 hrs |  |
| 113 | 2.7.1.1 | Design Review and Finalize Data Model | 2d | 2014-01-20 A | 2014-01-22 A |  | 100% |  |  |  |  | 50h | 50h |  | Bharath,NM, Siva Teja, Sri Krishna |
| 114 | 2.7.1.2 | Integration of Final UI from Prototypes | 5d | 2014-01-22 A | 2014-01-29 A | 113 | 100% |  |  |  |  | 75h | 75h |  | Bharath, NM, Siva Teja, Mahesh, Spandana |
| 115 | 2.7.1.3 | Development of Module | 20d | 2014-01-22 A | 2014-02-19 | 114 | 95% | 1.07d | 0.87d | 0d |  | 375h | 350h | 25 hrs | Bharath, Siva Teja, Mallikarjun, Siva, Avinash, Jeevan |
| 116 | 2.7.1.4 | Functional Testing of Module | 1d | 2014-02-19 A | 2014-02-20 | 115 | 87% | 0.13d | 0.8d | 0d |  | 75h | 65h | 10 hrs | Ramana, Sankeerth, Pramodh, Mamata, Bharath, Siva Teja |
| 117 | 2.7.1.5 | Bug Fixing & Stabilize code for Contacts | 1d | 2014-02-20 A | 2014-02-21 | 116 | 80% | 0.2d | 175.59d |  |  | 100h | 80h | 20 hrs | Ramana, Sankeerth, Pramodh, Mamata, Bharath, Siva Teja |
| 118 | 2.7.2 | **Design & Develop Campaigns Module** | 41d | 2014-02-10 A | 2014-04-07 |  | 79% | 8.5d | 143.71d |  |  | 795h | 610h | 185 hrs |  |
| 119 | 2.7.2.1 | Design Review and Finalize Data Model | 3d | 2014-02-10 A | 2014-02-12 A |  | 100% |  |  |  | start no earlier than 2014-02-08 | 50h | 50h |  |  |
| 120 | 2.7.2.2 | Integration of Final UI from Prototypes | 1d | 2014-02-13 A | 2014-02-13 A | 119 | 100% |  |  |  | start no earlier than 2014-02-12 | 75h | 75h |  |  |
| 121 | 2.7.2.3 | Development of Module | 30d | 2014-02-14 A | 2014-03-27 | 120 | 83% | 5d | 2.5d | 0d | start no earlier than 2014-02-13 | 450h | 375h | 75 hrs |  |
| 122 | 2.7.2.4 | Functional Testing of Module | 5d | 2014-03-28 A | 2014-04-03 | 121 | 50% | 2.5d | 1d | 0d | start no earlier than 2014-03-27 | 100h | 50h | 50 hrs |  |
| 123 | 2.7.2.5 | Bug Fixing & Stabilize code for Campaigns | 2d | 2014-04-04 A | 2014-04-07 | 122 | 50% | 1d | 143.71d |  | start no earlier than 2014-04-03 | 120h | 60h | 60 hrs |  |
| 124 | 2.7.3 | **Design & Develop Marketing Automation Module** | 41d | 2014-02-14 | 2014-04-11 |  |  |  | 0.5d |  |  | 840h |  | 840 hrs |  |
| 125 | 2.7.3.1 | Design Review and Finalize Data Model | 3d | 2014-02-14 | 2014-02-18 | 120 |  |  | 0.5d | 0d | start no earlier than 2014-02-13 | 75h |  |  |  |
| 126 | 2.7.3.2 | Integration of Final UI from Prototypes | 1d | 2014-02-19 | 2014-02-19 | 125 |  |  | 0.5d | 0d | start no earlier than 2014-02-18 | 75h |  |  |  |
| 127 | 2.7.3.3 | Development of Module | 30d | 2014-02-20 | 2014-04-02 | 126 |  |  | 0.5d | 0d | start no earlier than 2014-02-19 | 450h |  |  |  |
| 128 | 2.7.3.4 | Functional Testing of Module | 5d | 2014-04-03 | 2014-04-09 | 127 |  |  | 139.71d | 0d | start no earlier than 2014-04-02 | 100h |  |  |  |
| 129 | 2.7.3.5 | Bug Fixing & Stabilize code for Marketing Automation | 2d | 2014-04-10 | 2014-04-11 | 128 |  |  | 139.71d |  | start no earlier than 2014-04-09 | 140h |  |  |  |

| ID | WBS | Task | Duration | Start | Finish | Predecessors | Complete | Remaining | Total slack | Free slack | Constraint | Work | Actual work | Pending Hours |
| --- | --- | --- | --- | --- | --- | --- | --- | --- | --- | --- | --- | --- | --- | --- |
| 130 | 2.7.4 | **Design & Develop Internet Forms/Lead Captures Module** | 24d | 2014-04-03 | 2014-05-06 |  |  |  | 0.5d |  |  | 790h |  | 790 hrs |
| 131 | 2.7.4.1 | Design Review and Finalize Data Model | 2d | 2014-04-03 | 2014-04-04 | 127 |  |  | 0.5d | 0d | start no earlier than 2014-04-02 | 75h |  |  |
| 132 | 2.7.4.2 | Integration of Final UI from Prototypes | 1d | 2014-04-07 | 2014-04-07 | 131 |  |  | 0.5d | 0d | start no earlier than 2014-04-04 | 50h |  |  |
| 133 | 2.7.4.3 | Development of Module | 15d | 2014-04-08 | 2014-04-28 | 132 |  |  | 0.5d | 0d | start no earlier than 2014-04-07 | 425h |  |  |
| 134 | 2.7.4.4 | Functional Testing of Module | 4d | 2014-04-29 | 2014-05-02 | 133 |  |  | 0.5d | 0d | start no earlier than 2014-04-28 | 100h |  |  |
| 135 | 2.7.4.5 | Bug Fixing & Stabilize code for Internet Forms / Lead Captures | 2d | 2014-05-05 | 2014-05-06 | 134 |  |  | 122.71d |  | start no earlier than 2014-05-02 | 140h |  |  |
| 136 | 2.7.5 | **Design & Develop Personal Settings Module** | 19d | 2014-04-08 | 2014-05-02 |  |  |  | 1.75d |  |  | 855h |  | 855 hrs |
| 137 | 2.7.5.1 | Design Review and Finalize Data Model | 2d | 2014-04-08 | 2014-04-09 | 132 |  |  | 1.25d | 0d | start no earlier than 2014-04-07 | 75h |  |  |
| 138 | 2.7.5.2 | Integration of Final UI from Prototypes | 1d | 2014-04-10 | 2014-04-10 | 137 |  |  | 1.25d | 0d | start no earlier than 2014-04-09 | 75h |  |  |
| 139 | 2.7.5.3 | Development of Module | 10d | 2014-04-11 | 2014-04-24 | 138 |  |  | 1.25d | 0d | start no earlier than 2014-04-10 | 420h |  |  |
| 140 | 2.7.5.4 | Functional Testing of Module | 4d | 2014-04-25 | 2014-04-30 | 139 |  |  | 1.25d | 0d | start no earlier than 2014-04-24 | 125h |  |  |
| 141 | 2.7.5.5 | Bug Fixing & Stabilize code for Personal Settings | 2d | 2014-05-01 | 2014-05-02 | 140 |  |  | 124.71d |  | start no earlier than 2014-04-30 | 160h |  |  |
| 142 | 2.7.6 | **Design & Develop Account Admin Settings Module** | 34d | 2014-05-05 A | 2014-06-19 |  | 17% | 28.08d | 90.71d |  |  | 820h | 145h | 675 hrs |
| 143 | 2.7.6.1 | Design Review and Finalize Data Model | 2d | 2014-05-05 A | 2014-05-06 | 134 | 25% | 1.5d | 0.33d | 0d | start no earlier than 2014-05-02 | 80h | 20h | 60 hrs |
| 144 | 2.7.6.2 | Integration of Final UI from Prototypes | 1d | 2014-05-07 A | 2014-05-07 | 143 | 33% | 0.67d | 4.69d | 0d | start no earlier than 2014-05-06 | 120h | 40h | 80 hrs |
| 145 | 2.7.6.3 | Development of Module | 25d | 2014-05-08 A | 2014-06-11 | 144 | 19% | 20.31d | 0.4d | 0d | start no earlier than 2014-05-07 | 400h | 75h | 325 hrs |
| 146 | 2.7.6.4 | Functional Testing of Module | 4d | 2014-06-12 A | 2014-06-17 | 145 | 10% | 3.6d | 0.43d | 0d | start no earlier than 2014-06-11 | 100h | 10h | 90 hrs |
| 147 | 2.7.6.5 | Bug Fixing & Stabilize code for Account Admin Settings | 2d | 2014-06-18 | 2014-06-19 | 146 |  |  | 90.71d |  | start no earlier than 2014-06-17 | 120h |  |  |
| 148 | 2.7.7 | **Design & Develop Super Admin - Accounts Management Module** | 20d | 2014-05-01 A | 2014-05-28 |  | 66% | 6.82d | 106.71d |  |  | 910h | 534.99h | 325 hrs |
| 149 | 2.7.7.1 | Design Review and Finalize Data Model | 2d | 2014-05-01 A | 2014-05-02 | 140 | 88% | 0.25d | 0.75d | 0d | start no earlier than 2014-04-30 | 80h | 70h | 10 hrs |
| 150 | 2.7.7.2 | Integration of Final UI from Prototypes | 1d | 2014-05-05 A | 2014-05-05 | 149 | 75% | 0.25d | 10d | 0d | start no earlier than 2014-05-02 | 100h | 75h | 25 hrs |
| 151 | 2.7.7.3 | Development of Module | 15d | 2014-05-06 A | 2014-05-26 | 150 | 67% | 5d | 0.4d | 0d | start no earlier than 2014-05-05 | 450h | 300h | 150 hrs |
| 152 | 2.7.7.4 | Functional Testing of Module | 1d | 2014-05-27 A | 2014-05-27 | 151 | 40% | 0.6d | 0.28d | 0d | start no earlier than 2014-05-26 | 100h | 40h | 60 hrs |
| 153 | 2.7.7.5 | Bug Fixing & Stabilize code for Super Admin - Accounts Management | 1d | 2014-05-28 A | 2014-05-28 | 152 | 28% | 0.72d | 106.71d |  | start no earlier than 2014-05-27 | 180h | 49.99h | 80 hrs |

| ID | WBS | Task | Duration | Start | Finish | Predecessors | Complete | Remaining | Total slack | Free slack | Constraint | Work | Actual work | Pending Hours |
| --- | --- | --- | --- | --- | --- | --- | --- | --- | --- | --- | --- | --- | --- | --- |
| 154 | 2.7.8 | **Design & Develop Account Dashboard Module** | 16d | 2014-05-28 | 2014-06-18 |  |  |  | 91.71d |  |  | 800h |  | 800 hrs |
| 155 | 2.7.8.1 | Design Review and Finalize Data Model | 2d | 2014-05-28 | 2014-05-29 | 152 |  |  | 91.71d | 0d | start no earlier than 2014-05-27 | 100h |  |  |
| 156 | 2.7.8.2 | Integration of Final UI from Prototypes | 1d | 2014-05-30 | 2014-05-30 | 155 |  |  | 91.71d | 0d | start no earlier than 2014-05-29 | 150h |  |  |
| 157 | 2.7.8.3 | Development of Module | 7d | 2014-06-02 | 2014-06-10 | 156 |  |  | 91.71d | 0d | start no earlier than 2014-05-30 | 300h |  |  |
| 158 | 2.7.8.4 | Functional Testing of Module | 4d | 2014-06-11 | 2014-06-16 | 157 |  |  | 91.71d | 0d | start no earlier than 2014-06-10 | 150h |  |  |
| 159 | 2.7.8.5 | Bug Fixing & Stabilize code for Account Dashboard | 2d | 2014-06-17 | 2014-06-18 | 158 |  |  | 91.71d |  | start no earlier than 2014-06-16 | 100h |  |  |
| 160 | 2.7.9 | **Design & Develop Account Reports Module** | 29d | 2014-06-18 | 2014-07-28 |  |  |  | 0.43d |  |  | 950h |  | 950 hrs |
| 161 | 2.7.9.1 | Design Review and Finalize Data Model | 2d | 2014-06-18 | 2014-06-19 | 146 |  |  | 0.43d | 0d | start no earlier than 2014-06-17 | 80h |  |  |
| 162 | 2.7.9.2 | Integration of Final UI from Prototypes | 1d | 2014-06-20 | 2014-06-20 | 161 |  |  | 0.43d | 0d | start no earlier than 2014-06-19 | 120h |  |  |
| 163 | 2.7.9.3 | Development of Module | 20d | 2014-06-23 | 2014-07-18 | 162 |  |  | 0.43d | 0d | start no earlier than 2014-06-20 | 530h |  |  |
| 164 | 2.7.9.4 | Functional Testing of Module | 4d | 2014-07-21 | 2014-07-24 | 163 |  |  | 0.43d | 0d | start no earlier than 2014-07-18 | 100h |  |  |
| 165 | 2.7.9.5 | Bug Fixing & Stabilize code for Reports | 2d | 2014-07-25 | 2014-07-28 | 164 |  |  | 63.71d |  | start no earlier than 2014-07-24 | 120h |  |  |
| 166 | 2.7.10 | **Design & Develop 3rd Party Components and Integrations** | 41d | 2014-07-24 A | 2014-09-19 |  | 48% | 21.49d | 25.59d |  |  | 940h | 375.01h | 565 hrs |
| 167 | 2.7.10.1 | Design Review and Finalize Data Model | 5d | 2014-07-24 A | 2014-07-31 | 164 | 40% | 3d | 0.56d | 0d | start no earlier than 2014-07-24 | 125h | 50h | 75 hrs |
| 168 | 2.7.10.2 | Integration of Final UI from Prototypes | 3d | 2014-07-31 A | 2014-08-05 | 167 | 19% | 2.44d | 16.18d | 0d | start no earlier than 2014-07-31 | 160h | 30h | 130 hrs |
| 169 | 2.7.10.3 | Development of Module | 25d | 2014-08-05 A | 2014-09-09 | 168 | 65% | 8.82d | 0.56d | 0d | start no earlier than 2014-08-05 | 425h | 275h | 150 hrs |
| 170 | 2.7.10.4 | Functional Testing of Module | 5d | 2014-09-09 A | 2014-09-16 | 169 | 11% | 4.44d | 0.21d | 0d | start no earlier than 2014-09-09 | 90h | 10h | 80 hrs |
| 171 | 2.7.10.5 | Bug Fixing & Stabilize code for 3rd Party Components & Integrations | 3d | 2014-09-16 A | 2014-09-19 | 170 | 7% | 2.79d | 25.59d |  | start no earlier than 2014-09-16 | 140h | 10h | 130 hrs |
| 172 | 2.7.11 | **Open API to third party developers** | 5d | 2014-07-25 | 2014-07-31 |  |  |  | 0.43d |  |  | 200h |  | 200 hrs |
| 173 | 2.7.11.1 | Open API to third party developers | 4d | 2014-07-25 | 2014-07-30 | 164 |  |  | 0.43d | 0d | start no earlier than 2014-07-24 | 125h |  |  |
| 174 | 2.7.11.2 | Unit & Integration Testing | 1d | 2014-07-31 | 2014-07-31 | 173 |  |  | 0.43d | 0d | start no earlier than 2014-07-30 | 75h |  |  |
| 175 | 2.8 | **Module Level Integration & Integration Unit Testing** | 10.59d | 2014-07-31 A | 2014-08-14 |  | 18% | 8.71d | 0d |  |  | 605h | 80h | 525 hrs |
| 176 | 2.8.1 | Module Level Integration | 5.59d | 2014-07-31 A | 2014-08-07 | 174 | 23% | 4.29d | 0.44d | 0d | start no earlier than 2014-07-31 | 350h | 50.01h | 300 hrs |
| 177 | 2.8.2 | Integration Unit Testing and Bug Fixing | 4d | 2014-08-07 A | 2014-08-13 | 176 | 11% | 3.56d | 0.13d | 0d | start no earlier than 2014-08-07 | 180h | 20h | 160 hrs |
| 178 | 2.8.3 | Build Stabilization & Readyness | 1d | 2014-08-13 A | 2014-08-14 | 177 | 13% | 0.87d | 0d |  | start no earlier than 2014-08-13 | 75h | 10h | 65 hrs |

| ID | WBS | Task | Type | Duration | Start | Finish | Predecessors | Complete | Remaining | Total slack | Free slack | Constraint | Work | Actual work | Pending Hours |
| --- | --- | --- | --- | --- | --- | --- | --- | --- | --- | --- | --- | --- | --- | --- | --- |
| 179 | 3 | **Testing Phase** |  | 188d | 2014-01-03 A | 2014-09-24 |  | 15% | 158.9d | 22.59d |  |  | 2150h | 370h |  |
| 180 | 3.1 | **Infrastructure Needs** |  | 5d | 2014-01-19 A | 2014-01-25 A |  | 100% |  |  |  |  | 165h | 165h |  |
| 181 | 3.1.1 | Acquire needed applications and tools |  | 2.12d | 2014-01-19 A | 2014-01-22 A |  | 100% |  |  |  | start no earlier than 2014-01-19 | 25h | 25h |  |
| 182 | 3.1.2 | Setup Testing Environment |  | 1.88d | 2014-01-23 A | 2014-01-24 A |  | 100% |  |  |  | start no earlier than 2014-01-23 | 60h | 60h |  |
| 183 | 3.1.3 | Setup Test Database | milestone | 0d | 2014-01-25 A | 2014-01-25 A |  | 100% |  |  |  | start no earlier than 2014-01-25 | 80h | 80h |  |
| 184 | 3.2 | **Project Reporting Processes** |  | 2d | 2014-01-03 A | 2014-01-07 A |  | 100% |  |  |  |  | 50h | 50h |  |
| 185 | 3.2.1 | Bug Reporting Process Documents |  | 1d | 2014-01-03 A | 2014-01-06 A |  | 100% |  |  |  | start no earlier than 2014-01-03 | 20h | 20h |  |
| 186 | 3.2.2 | Bug Status Tracking Process and Tools Set-up |  | 1d | 2014-01-06 A | 2014-01-07 A | 185 | 100% |  |  |  | start no earlier than 2014-01-06 | 30h | 30h |  |
| 187 | 3.3 | **Integration Testing** |  | 10d | 2014-07-31 A | 2014-08-14 |  | 6% | 9.43d | 0.2d |  |  | 290h | 20h | 270 hrs |
| 188 | 3.3.1 | Identify Integration Testing Guidelines & Checklist |  | 1d | 2014-07-31 A | 2014-08-01 |  | 13% | 0.88d | 0.44d | 0d | start no earlier than 2014-07-31 | 80h | 10h | 70 hrs |
| 189 | 3.3.2 | Integration Testing & Bug Fixing |  | 8d | 2014-08-01 A | 2014-08-13 | 188 | 6% | 7.56d | 0.2d | 0d | start no earlier than 2014-08-01 | 180h | 10h | 170 hrs |
| 190 | 3.3.3 | Publish Integration Testing Results for Final UAT |  | 1d | 2014-08-13 | 2014-08-14 | 189 |  |  | 0.2d | 0d | start no earlier than 2014-08-13 | 30h |  | 30 hrs |
| 191 | 3.4 | **UI Interface Testing** |  | 6d | 2014-08-14 A | 2014-08-22 |  | 8% | 5.51d | 0.17d |  |  | 220h | 20h | 200 hrs |
| 192 | 3.4.1 | Identify UI Interfacing Testing Guidelines & Checklist |  | 1d | 2014-08-14 A | 2014-08-15 | 190 | 20% | 0.8d | 0.29d | 0d | start no earlier than 2014-08-14 | 50h | 10h | 40 hrs |
| 193 | 3.4.2 | UI Testing & Bug Fixing |  | 4d | 2014-08-15 A | 2014-08-21 | 192 | 7% | 3.71d | 0.17d | 0d | start no earlier than 2014-08-15 | 140h | 10h | 130 hrs |
| 194 | 3.4.3 | Publish UI Testing Results for Final UAT |  | 1d | 2014-08-21 | 2014-08-22 | 193 |  |  | 0.17d | 0d | start no earlier than 2014-08-21 | 30h |  | 30 hrs |
| 195 | 3.5 | **Cross Browser Testing** |  | 8d | 2014-08-14 A | 2014-08-26 |  | 8% | 7.39d | 43.59d |  |  | 205h | 15h | 190 hrs |
| 196 | 3.5.1 | Identify Browser Compatibillity Testing Guidelines & Checklist |  | 2d | 2014-08-14 A | 2014-08-18 | 190 | 11% | 1.78d | 0.38d | 0d | start no earlier than 2014-08-14 | 45h | 5h | 40 hrs |
| 197 | 3.5.2 | Cross Browser Testing & Bug Fixing |  | 5d | 2014-08-18 A | 2014-08-25 | 196 | 8% | 4.62d | 43.59d | 0d | start no earlier than 2014-08-18 | 130h | 10h | 120 hrs |
| 198 | 3.5.3 | Publish Cross Browser Testing Results for Final UAT |  | 1d | 2014-08-25 | 2014-08-26 | 197 |  |  | 43.59d |  | start no earlier than 2014-08-25 | 30h |  | 30 hrs |
| 199 | 3.6 | **Database design Testing** |  | 10d | 2014-08-22 A | 2014-09-05 |  | 9% | 9.07d | 0.5d |  |  | 320h | 30h | 310 hrs |
| 200 | 3.6.1 | Identify Database Testing Guidelines & Checklist |  | 1d | 2014-08-22 A | 2014-08-25 | 194 | 17% | 0.83d | 0.5d | 0d | start no earlier than 2014-08-22 | 60h | 10h | 50 hrs |
| 201 | 3.6.2 | Create DB Test Scripts & Test Cases |  | 4d | 2014-08-25 A | 2014-08-29 | 200 | 13% | 3.5d | 0.27d | 0d | start no earlier than 2014-08-25 | 80h | 10h | 70 hrs |
| 202 | 3.6.3 | Database Testing & Bug Fixing |  | 4d | 2014-08-29 A | 2014-09-04 | 201 | 7% | 3.73d | 0.5d | 0d | start no earlier than 2014-08-29 | 150h | 10h | 160 hrs |
| 203 | 3.6.4 | Publish Databsae Design Testing Results for Final UAT |  | 1d | 2014-09-04 | 2014-09-05 | 202 |  |  | 0.5d | 0d | start no earlier than 2014-09-04 | 30h |  | 30 hrs |

| ID | WBS | Task | Duration | Start | Finish | Predecessors | Complete | Remaining | Total slack | Free slack | Constraint | Work | Actual work | Pending Hours |
| --- | --- | --- | --- | --- | --- | --- | --- | --- | --- | --- | --- | --- | --- | --- |
| 204 | 3.7 | **Security Penetration/Venurability Tests** | 11d | 2014-08-22 A | 2014-09-08 |  | 11% | 9.82d | 34.59d |  |  | 305h | 25h | 270 hrs |
| 205 | 3.7.1 | Identify Security/Venurability Testing Guidelines & Checklist | 3d | 2014-08-22 A | 2014-08-27 | 194 | 20% | 2.4d | 42.59d |  | start no earlier than 2014-08-22 | 25h | 5h | 20 hrs |
| 206 | 3.7.2 | Set-up Tools and Required Performance load environments | 3d | 2014-08-25 A | 2014-08-28 | 200 | 20% | 2.4d | 41.59d |  | start no earlier than 2014-08-25 | 50h | 10h | 40 hrs |
| 207 | 3.7.3 | Security Testing & Bug Fixing | 6d | 2014-08-29 A | 2014-09-08 | 201 | 5% | 5.7d | 0.13d | 0d | start no earlier than 2014-08-29 | 200h | 10h | 190 hrs |
| 208 | 3.7.4 | Publish Security Penetration/Venurability Testing Results for Final UAT | 2d | 2014-09-04 | 2014-09-08 | 202 |  |  | 34.59d |  | start no earlier than 2014-09-04 | 30h |  | 30 hrs |
| 209 | 3.8 | **Performance & Load Testing** | 13d | 2014-09-05 A | 2014-09-24 |  | 12% | 11.5d | 22.59d |  |  | 290h | 25h | 265 hrs |
| 210 | 3.8.1 | Identify Performance Testing Guidelines & Checklist | 1d | 2014-09-05 A | 2014-09-08 | 203 | 50% | 0.5d | 0.6d | 0d | start no earlier than 2014-09-05 | 10h | 5h | 5 hrs |
| 211 | 3.8.2 | Configure the environment for performance testing | 3d | 2014-09-08 A | 2014-09-11 | 210 | 20% | 2.4d | 0.4d | 0d | start no earlier than 2014-09-08 | 50h | 10h | 40 hrs |
| 212 | 3.8.3 | Performance Testing & Bug Fixing | 8d | 2014-09-11 A | 2014-09-23 | 211 | 5% | 7.6d | 22.59d | 0d | start no earlier than 2014-09-11 | 200h | 10h | 190 hrs |
| 213 | 3.8.4 | Publish Performance Testing Results for Final UAT | 1d | 2014-09-23 | 2014-09-24 | 212 |  |  | 22.59d |  | start no earlier than 2014-09-23 | 30h |  | 30 hrs |
| 214 | 3.9 | **Regression Testing** | 12d | 2014-09-08 A | 2014-09-24 |  | 5% | 11.37d | 22.59d |  |  | 305h | 20h | 285 hrs |
| 215 | 3.9.1 | Identify Regression Testing Guidelines & Checklist | 1d | 2014-09-08 A | 2014-09-09 | 207 | 13% | 0.87d | 0.5d | 0d | start no earlier than 2014-09-08 | 75h | 10h | 65 hrs |
| 216 | 3.9.2 | Regression Testing & Bug Fixing | 10d | 2014-09-09 A | 2014-09-23 | 215 | 5% | 9.5d | 22.59d | 0d | start no earlier than 2014-09-09 | 200h | 10h | 195 hrs |
| 217 | 3.9.3 | Publish Regression Testing Results for Final UAT | 1d | 2014-09-23 | 2014-09-24 | 216 |  |  | 22.59d |  | start no earlier than 2014-09-23 | 30h |  | 30 hrs |
| 218 | 4 | **Product Migration Phase** | 28d | 2014-08-14 | 2014-09-23 |  |  |  | 0d |  |  | 755h |  |  |
| 219 | 4.1 | **Identify and Plan Migration Strategy for Existing Clients - Review** | 10d | 2014-08-14 | 2014-08-28 |  |  |  | 0d |  |  | 295h |  |  |
| 220 | 4.1.1 | Identify the Areas of the Data Required for Migration and their volumes | 2d | 2014-08-14 | 2014-08-18 | 178 |  |  | 0d |  | start no earlier than 2014-08-14 | 75h |  |  |
| 221 | 4.1.2 | Identify the development apporach for migrating data and validate to propose | 4d | 2014-08-18 | 2014-08-22 | 220 |  |  | 0d |  | start no earlier than 2014-08-18 | 120h |  |  |
| 222 | 4.1.3 | Identify BETA Customers & Analyse the customer data Points for Migration | 4d | 2014-08-22 | 2014-08-28 | 221 |  |  | 0d |  | start no earlier than 2014-08-22 | 100h |  |  |
| 223 | 4.2 | **Design and Propose Development Plan of Migration for Approvals** | 18d | 2014-08-28 | 2014-09-23 |  |  |  | 0d |  |  | 460h |  |  |
| 224 | 4.2.1 | Document and Propose the Data Migration Development Approaches and Plan | 1d | 2014-08-28 | 2014-08-29 | 222 |  |  | 0d |  | start no earlier than 2014-08-28 | 60h |  |  |
| 225 | 4.2.2 | Development of Data Migration Services & Validation Scripts | 10d | 2014-08-29 | 2014-09-12 | 224 |  |  | 0d |  | start no earlier than 2014-08-29 | 300h |  |  |
| 226 | 4.2.3 | Unit Testing and Data Import on DEV | 3d | 2014-09-12 | 2014-09-17 | 225 |  |  | 0d |  | start no earlier than 2014-09-12 | 60h |  |  |
| 227 | 4.2.4 | Create Stage DB with Migrated Data for Test - UAT / Sign-off | 4d | 2014-09-17 | 2014-09-23 | 226 |  |  | 0d |  | start no earlier than 2014-09-17 | 40h |  |  |

| ID | WBS | Task | Duration | Start | Finish | Predecessors | Total slack | Free slack | Constraint | Work |
| --- | --- | --- | --- | --- | --- | --- | --- | --- | --- | --- |
| 228 | 5 | **Product Deployment Phase** | 23d | 2014-09-23 | 2014-10-24 |  | 0d |  |  | 1110h |
| 229 | 5.1 | **Deployment Strategy Plan** | 4d | 2014-09-23 | 2014-09-29 |  | 19d |  |  | 40h |
| 230 | 5.1.1 | Design & Review Deployment Strategy for Final Client Signoff | 4d | 2014-09-23 | 2014-09-29 | 227 | 19d |  | start no earlier than 2014-09-23 | 40h |
| 231 | 5.2 | **Release Readiness Checklist** | 5d | 2014-09-23 | 2014-09-30 |  | 0d |  |  | 80h |
| 232 | 5.2.1 | Design and Review to Publish Release Readiness for Client Sign off | 5d | 2014-09-23 | 2014-09-30 | 227 | 0d |  | start no earlier than 2014-09-23 | 80h |
| 233 | 5.3 | **Set-up Deployment Infrastructure** | 8d | 2014-09-30 | 2014-10-10 |  | 0d |  |  | 145h |
| 234 | 5.3.1 | Identify The Infrastucture Requirements for Procurements | 2d | 2014-09-30 | 2014-10-02 | 232 | 0d |  | start no earlier than 2014-09-30 | 45h |
| 235 | 5.3.2 | Get Quotes and Estimates From Providers / Infra Details from Client | 3d | 2014-10-02 | 2014-10-07 | 234 | 0d |  | start no earlier than 2014-10-02 | 65h |
| 236 | 5.3.3 | Analyse the Final Deployment Infrasture for GO-LIVE | 3d | 2014-10-07 | 2014-10-10 | 235 | 0d |  | start no earlier than 2014-10-07 | 35h |
| 237 | 5.4 | **GO-LIVE** | 10d | 2014-10-10 | 2014-10-24 |  | 0d |  |  | 845h |
| 238 | 5.4.1 | Prepare the Deployable Code / DB for GOLIVE | 2d | 2014-10-10 | 2014-10-14 | 236 | 0d |  | start no earlier than 2014-10-10 | 75h |
| 239 | 5.4.2 | Environment Set-up for GOLIVE | 1d | 2014-10-14 | 2014-10-15 | 238 | 0d |  | start no earlier than 2014-10-14 | 50h |
| 240 | 5.4.3 | Deploy Code on Servers & Configure Initial Settings | 1d | 2014-10-15 | 2014-10-16 | 239 | 0d |  | start no earlier than 2014-10-15 | 80h |
| 241 | 5.4.4 | Migration of Identified Clients Data to New Application DB | 1d | 2014-10-16 | 2014-10-17 | 240 | 1d | 0d | start no earlier than 2014-10-16 | 75h |
| 242 | 5.4.5 | Deploy all Schedulars and Services for GOLIVE | 1d | 2014-10-17 | 2014-10-20 | 241 | 1d | 0d | start no earlier than 2014-10-17 | 75h |
| 243 | 5.4.6 | Smoke Test for final GOLIVE Validation | 2d | 2014-10-20 | 2014-10-22 | 242 | 1d | 0d | start no earlier than 2014-10-20 | 80h |
| 244 | 5.4.7 | Publish GOLIVE Notifications | 1d | 2014-10-22 | 2014-10-23 | 243 | 1d |  | start no earlier than 2014-10-22 | 10h |
| 245 | 5.4.8 | Moniter and Maintain the Stability of the Build | 6d | 2014-10-16 | 2014-10-24 | 240 | 0d |  | start no earlier than 2014-10-16 | 400h |
