# SmartTouchCRM V 1.0

Schedule from MS Project, 2014-09-29 to 2015-03-19, status date 2013-10-01, A marks actual dates.

## Calendars

- Standard: Mon-Fri 08:00-12:00, 13:00-17:00; Sat-Sun off.

## Resources

| Resource |
| --- |
| Ashok |
| Hari Pratap |

## Schedule

| ID | WBS | Task | Type | Duration | Start | Finish | Predecessors | Remaining | Total slack | Resources | Work |
| --- | --- | --- | --- | --- | --- | --- | --- | --- | --- | --- | --- |
| 1 | 1 | **Product Planning Phase** |  | 13d | 2014-09-29 A | 2014-10-16 |  | 13d | 0d |  | 129.83h |
| 2 | 1.1 | **Product Initiation Process** |  | 10d | 2014-09-29 A | 2014-10-13 |  | 10d | 0d |  | 66.83h |
| 3 | 1.1.1 | Project Initiation & Planning Meetings | manual | 5d | 2014-09-29 A | 2014-10-06 |  | 5d |  | Ashok | 20.83h |
| 4 | 1.1.2 | Product Kickoff Meeting | manual | 1d | 2014-10-06 | 2014-10-07 | 3 |  |  |  | 8h |
| 5 | 1.1.3 | Project Phase overview meetings | manual | 3d | 2014-10-07 | 2014-10-10 | 4 |  |  |  | 30h |
| 6 | 1.1.4 | Revise project proposal as needed and submit for final approval | manual | 1d | 2014-10-10 | 2014-10-13 | 5 |  |  |  | 8h |
| 7 | 1.2 | **Requirements Analysis Phase** |  | 4d | 2014-10-07 | 2014-10-13 |  |  | 0d |  | 23h |
| 8 | 1.2.1 | Meeting with Alan/Robert/Grant | manual | 1d | 2014-10-07 | 2014-10-08 | 4 |  |  |  | 8h |
| 9 | 1.2.2 | Statement of business requirements, impacts and prioritization of initiatives | manual | 3d | 2014-10-08 | 2014-10-13 | 8 |  |  |  | 15h |
| 10 | 1.3 | **Resource Grouping and Defining Roles** |  | 7d | 2014-10-07 | 2014-10-16 |  |  | 0d |  | 40h |
| 11 | 1.3.1 | Assemble internal and external teams to Start project | manual | 2d | 2014-10-07 | 2014-10-09 | 4 |  |  |  | 10h |
| 12 | 1.3.2 | Assemble needed Teammembers and Discuss on Plan for Phase | manual | 5d | 2014-10-09 | 2014-10-16 | 11 |  |  |  | 30h |
| 13 | 2 | **Product Implementation Phase** |  | 75d | 2014-10-16 A | 2015-01-29 |  | 75d | 0d |  | 3615h |
| 14 | 2.1 | **Design / Review Module Moqups** |  | 15.3d | 2014-10-16 | 2014-11-06 |  |  | 0d |  | 240h |
| 15 | 2.1.1 | Contacts Module | manual | 3.57d | 2014-10-16 | 2014-10-21 | 12 |  |  |  | 25h |
| 16 | 2.1.2 | Marketing Automation | manual | 5d | 2014-10-21 | 2014-10-28 | 15 |  |  |  | 60h |
| 17 | 2.1.3 | Internet Forms / Lead Capture | manual | 3.33d | 2014-10-28 | 2014-11-03 | 16 |  |  |  | 25h |
| 18 | 2.1.4 | Account Admin Settings | manual | 3.33d | 2014-10-21 | 2014-10-27 | 15 |  |  |  | 25h |
| 19 | 2.1.5 | Reports | manual | 2.4d | 2014-10-27 | 2014-10-29 | 18 |  |  |  | 30h |
| 20 | 2.1.6 | Events | manual | 6d | 2014-10-29 | 2014-11-06 | 19 |  |  |  | 75h |
| 21 | 2.2 | **Finalizing Prototypes & Interface Documents - Business Sign-off** |  | 19d | 2014-10-20 A | 2014-11-14 |  | 19d | 0d |  | 225h |
| 22 | 2.2.1 | Contacts Module | manual | 3d | 2014-10-20 A | 2014-10-23 |  | 3d |  |  | 30h |
| 23 | 2.2.2 | Marketing Automation | manual | 5d | 2014-10-23 | 2014-10-30 | 22 |  |  |  | 45h |
| 24 | 2.2.3 | Internet Forms / Lead Capture | manual | 6d | 2014-10-30 | 2014-11-07 | 23 |  |  |  | 30h |
| 25 | 2.2.4 | Account Admin Settings | manual | 4d | 2014-10-23 | 2014-10-29 | 22 |  |  |  | 30h |
| 26 | 2.2.5 | Reports | manual | 6d | 2014-10-29 | 2014-11-06 | 25 |  |  |  | 30h |
| 27 | 2.2.6 | Events | manual | 6d | 2014-11-06 | 2014-11-14 | 26 |  |  |  | 60h |

| ID | WBS | Task | Type | Duration | Start | Finish | Predecessors | Remaining | Total slack | Work |
| --- | --- | --- | --- | --- | --- | --- | --- | --- | --- | --- |
| 28 | 2.3 | **QA Test Preparations & Planning** |  | 24d | 2014-10-24 A | 2014-11-27 |  | 24d | 0d | 220h |
| 29 | 2.3.1 | Identify Scope for Test Cases and Review Interface Documents | manual | 18d | 2014-10-24 A | 2014-11-19 |  | 18d |  | 25h |
| 30 | 2.3.2 | Document Test Cases for Final Signed-off Modules | manual | 20d | 2014-10-24 A | 2014-11-21 |  | 20d |  | 125h |
| 31 | 2.3.3 | Review and Finalize Test Cases | manual | 2d | 2014-11-21 | 2014-11-25 | 30 |  |  | 45h |
| 32 | 2.3.4 | Identify & Define UI Test Guidelines | manual | 2d | 2014-11-25 | 2014-11-27 | 31 |  |  | 25h |
| 33 | 2.4 | **Functional Development** |  | 67d | 2014-10-28 | 2015-01-29 |  |  | 0d | 2750h |
| 34 | 2.4.1 | **Design & Develop Contacts Module** |  | 17d | 2014-10-28 | 2014-11-20 |  |  | 0d | 395h |
| 35 | 2.4.1.1 | Design Review and Finalize Data Model | manual | 2d | 2014-10-28 | 2014-10-30 |  |  |  | 15h |
| 36 | 2.4.1.2 | Integration of Final UI from Prototypes | manual | 1d | 2014-10-30 | 2014-10-31 | 35 |  |  | 20h |
| 37 | 2.4.1.3 | Development of Module | manual | 10d | 2014-10-31 | 2014-11-14 | 36 |  |  | 220h |
| 38 | 2.4.1.4 | Functional Testing of Module | manual | 2d | 2014-11-14 | 2014-11-18 | 37 |  |  | 60h |
| 39 | 2.4.1.5 | Bug Fixing & Stabilize code for Contacts | manual | 2d | 2014-11-18 | 2014-11-20 | 38 |  |  | 80h |
| 40 | 2.4.2 | **Design & Develop Marketing Automation Module** |  | 16d | 2014-10-31 | 2014-11-24 |  |  | 0d | 455h |
| 41 | 2.4.2.1 | Design Review and Finalize Data Model | manual | 2d | 2014-10-31 | 2014-11-04 |  |  |  | 40h |
| 42 | 2.4.2.2 | Integration of Final UI from Prototypes | manual | 1d | 2014-11-04 | 2014-11-05 | 41 |  |  | 20h |
| 43 | 2.4.2.3 | Development of Module | manual | 8d | 2014-11-05 | 2014-11-17 | 42 |  |  | 250h |
| 44 | 2.4.2.4 | Functional Testing of Module | manual | 3d | 2014-11-17 | 2014-11-20 | 43 |  |  | 60h |
| 45 | 2.4.2.5 | Bug Fixing & Stabilize code for Marketing Automation | manual | 2d | 2014-11-20 | 2014-11-24 | 44 |  |  | 85h |
| 46 | 2.4.3 | **Design & Develop Internet Forms/Lead Captures Module** |  | 16d | 2014-11-18 | 2014-12-10 |  |  | 0d | 385h |
| 47 | 2.4.3.1 | Design Review and Finalize Data Model | manual | 2d | 2014-11-18 | 2014-11-20 |  |  |  | 30h |
| 48 | 2.4.3.2 | Integration of Final UI from Prototypes | manual | 1d | 2014-11-20 | 2014-11-21 | 47 |  |  | 20h |
| 49 | 2.4.3.3 | Development of Module | manual | 7d | 2014-11-21 | 2014-12-02 | 48 |  |  | 175h |
| 50 | 2.4.3.4 | Functional Testing of Module | manual | 4d | 2014-12-02 | 2014-12-08 | 49 |  |  | 60h |
| 51 | 2.4.3.5 | Bug Fixing & Stabilize code for Internet Forms / Lead Captures | manual | 2d | 2014-12-08 | 2014-12-10 | 50 |  |  | 100h |

| ID | WBS | Task | Type | Duration | Start | Finish | Predecessors | Total slack | Work |
| --- | --- | --- | --- | --- | --- | --- | --- | --- | --- |
| 52 | 2.4.4 | **Design & Develop Account Admin Settings Module** |  | 16d | 2014-11-24 | 2014-12-16 |  | 0d | 395h |
| 53 | 2.4.4.1 | Design Review and Finalize Data Model | manual | 2d | 2014-11-24 | 2014-11-26 |  |  | 20h |
| 54 | 2.4.4.2 | Integration of Final UI from Prototypes | manual | 1d | 2014-11-26 | 2014-11-27 | 53 |  | 20h |
| 55 | 2.4.4.3 | Development of Module | manual | 8d | 2014-11-27 | 2014-12-09 | 54 |  | 175h |
| 56 | 2.4.4.4 | Functional Testing of Module | manual | 3d | 2014-12-09 | 2014-12-12 | 55 |  | 80h |
| 57 | 2.4.4.5 | Bug Fixing & Stabilize code for Account Admin Settings | manual | 2d | 2014-12-12 | 2014-12-16 | 56 |  | 100h |
| 58 | 2.4.5 | **Design & Develop Account Reports Module** |  | 16d | 2014-12-11 | 2015-01-02 |  | 0d | 370h |
| 59 | 2.4.5.1 | Design Review and Finalize Data Model | manual | 2d | 2014-12-11 | 2014-12-15 |  |  | 40h |
| 60 | 2.4.5.2 | Integration of Final UI from Prototypes | manual | 1d | 2014-12-15 | 2014-12-16 | 59 |  | 20h |
| 61 | 2.4.5.3 | Development of Module | manual | 8d | 2014-12-16 | 2014-12-26 | 60 |  | 150h |
| 62 | 2.4.5.4 | Functional Testing of Module | manual | 3d | 2014-12-26 | 2014-12-31 | 61 |  | 60h |
| 63 | 2.4.5.5 | Bug Fixing & Stabilize code for Reports | manual | 2d | 2014-12-31 | 2015-01-02 | 62 |  | 100h |
| 64 | 2.4.6 | **Design & Develop Events Module** |  | 33.12d | 2014-12-13 | 2015-01-29 |  | 0d | 655h |
| 65 | 2.4.6.1 | Design Review and Finalize Data Model | manual | 5d | 2014-12-13 | 2014-12-19 |  |  | 50h |
| 66 | 2.4.6.2 | Integration of Final UI from Prototypes | manual | 3d | 2014-12-19 | 2014-12-24 | 65 |  | 25h |
| 67 | 2.4.6.3 | Development of Module | manual | 18d | 2014-12-24 | 2015-01-19 | 66 |  | 350h |
| 68 | 2.4.6.4 | Functional Testing of Module | manual | 5d | 2015-01-19 | 2015-01-26 | 67 |  | 90h |
| 69 | 2.4.6.5 | Bug Fixing & Stabilize code for Events Module | manual | 3d | 2015-01-26 | 2015-01-29 | 68 |  | 140h |
| 70 | 2.4.7 | **Update API to third party developers** |  | 6d | 2015-01-05 | 2015-01-13 |  | 0d | 95h |
| 71 | 2.4.7.1 | Open API to third party developers | manual | 5d | 2015-01-05 | 2015-01-12 |  |  | 75h |
| 72 | 2.4.7.2 | Unit & Integration Testing | manual | 1d | 2015-01-12 | 2015-01-13 | 71 |  | 20h |
| 73 | 2.5 | **Module Level Integration & Integration Unit Testing** |  | 13d | 2015-01-12 | 2015-01-29 |  | 0d | 180h |
| 74 | 2.5.1 | Module Level Integration | manual | 5d | 2015-01-12 | 2015-01-19 |  |  | 100h |
| 75 | 2.5.2 | Integration Unit Testing and Bug Fixing | manual | 4d | 2015-01-19 | 2015-01-23 | 74 |  | 60h |
| 76 | 2.5.3 | Build Stabilization & Readyness | manual | 4d | 2015-01-23 | 2015-01-29 | 75 |  | 20h |

| ID | WBS | Task | Type | Duration | Start | Finish | Predecessors | Total slack | Work |
| --- | --- | --- | --- | --- | --- | --- | --- | --- | --- |
| 77 | 3 | **Testing Phase** |  | 21d | 2015-01-12 | 2015-02-10 |  | 0d | 490h |
| 78 | 3.1 | **Integration Testing** |  | 7d | 2015-01-12 | 2015-01-21 |  | 0d | 130h |
| 79 | 3.1.1 | Identify Integration Testing Guidelines & Checklist | manual | 2d | 2015-01-12 | 2015-01-14 |  |  | 20h |
| 80 | 3.1.2 | Integration Testing & Bug Fixing | manual | 4d | 2015-01-14 | 2015-01-20 | 79 |  | 100h |
| 81 | 3.1.3 | Publish Integration Testing Results for Final UAT | manual | 1d | 2015-01-20 | 2015-01-21 | 80 |  | 10h |
| 82 | 3.2 | **Database design Testing** |  | 6d | 2015-01-20 | 2015-01-28 |  | 0d | 140h |
| 83 | 3.2.1 | Identify Database Testing Guidelines & Checklist | manual | 1d | 2015-01-20 | 2015-01-21 | 80 |  | 60h |
| 84 | 3.2.2 | Database Testing & Bug Fixing | manual | 4d | 2015-01-21 | 2015-01-27 | 83 |  | 70h |
| 85 | 3.2.3 | Publish Databsae Design Testing Results for Final UAT | manual | 1d | 2015-01-27 | 2015-01-28 | 84 |  | 10h |
| 86 | 3.3 | **Performance & Load Testing** |  | 6d | 2015-01-20 | 2015-01-28 |  | 0d | 100h |
| 87 | 3.3.1 | Identify Performance Testing Guidelines & Checklist | manual | 1d | 2015-01-20 | 2015-01-21 | 80 |  | 10h |
| 88 | 3.3.2 | Security Testing & Bug Fixing | manual | 4d | 2015-01-21 | 2015-01-27 | 87 |  | 80h |
| 89 | 3.3.3 | Publish Performance Testing Results for Final UAT | manual | 1d | 2015-01-27 | 2015-01-28 | 88 |  | 10h |
| 90 | 3.4 | **Regression Testing** |  | 7d | 2015-01-30 | 2015-02-10 |  | 0d | 120h |
| 91 | 3.4.1 | Identify Regression Testing Guidelines & Checklist | manual | 1d | 2015-01-30 | 2015-02-02 |  |  | 10h |
| 92 | 3.4.2 | Regression Testing & Bug Fixing | manual | 5d | 2015-02-02 | 2015-02-09 | 91 |  | 100h |
| 93 | 3.4.3 | Publish Regression Testing Results for Final UAT | manual | 1d | 2015-02-09 | 2015-02-10 | 92 |  | 10h |
| 94 | 4 | **Product Migration Phase** |  | 13d | 2015-01-30 | 2015-02-18 |  | 0d | 430h |
| 95 | 4.1 | **Identify and Plan Migration Strategy for Existing Clients - Review** |  | 6d | 2015-01-30 | 2015-02-09 |  | 0d | 110h |
| 96 | 4.1.1 | Identify the Areas of the Data Required for Migration and their volumes | manual | 2d | 2015-01-30 | 2015-02-03 |  |  | 35h |
| 97 | 4.1.2 | Identify the development apporach for migrating data and validate to propose | manual | 4d | 2015-02-03 | 2015-02-09 | 96 |  | 75h |
| 98 | 4.2 | **Design and Propose Development Plan of Migration for Approvals** |  | 7d | 2015-02-09 | 2015-02-18 |  | 0d | 320h |
| 99 | 4.2.1 | Document and Propose the Data Migration Development Approaches and Plan | manual | 1d | 2015-02-09 | 2015-02-10 | 97 |  | 60h |
| 100 | 4.2.2 | Development of Data Migration Services & Validation Scripts | manual | 5d | 2015-02-10 | 2015-02-17 | 99 |  | 180h |
| 101 | 4.2.3 | Create Stage DB with Migrated Data for Test - UAT / Sign-off | manual | 1d | 2015-02-17 | 2015-02-18 | 100 |  | 80h |

| ID | WBS | Task | Type | Duration | Start | Finish | Predecessors | Total slack | Work |
| --- | --- | --- | --- | --- | --- | --- | --- | --- | --- |
| 102 | 5 | **Product Deployment Phase** |  | 21d | 2015-02-18 | 2015-03-19 |  | 0d | 473h |
| 103 | 5.1 | **Deployment Strategy Plan** |  | 4d | 2015-02-18 | 2015-02-24 |  | 0d | 30h |
| 104 | 5.1.1 | Design & Review Deployment Strategy for Final Client Signoff | manual | 4d | 2015-02-18 | 2015-02-24 | 101 |  | 30h |
| 105 | 5.2 | **Release Readiness Checklist** |  | 5d | 2015-02-24 | 2015-03-03 |  | 0d | 45h |
| 106 | 5.2.1 | Design and Review to Publish Release Readiness for Client Sign off | manual | 5d | 2015-02-24 | 2015-03-03 | 104 |  | 45h |
| 107 | 5.3 | **GO-LIVE** |  | 17d | 2015-02-24 | 2015-03-19 |  | 0d | 398h |
| 108 | 5.3.1 | Prepare the Deployable Code / DB for GOLIVE | manual | 2d | 2015-02-24 | 2015-02-26 |  |  | 35h |
| 109 | 5.3.2 | Deploy Code on Servers & Configure Initial Settings | manual | 1d | 2015-02-26 | 2015-02-27 | 108 |  | 25h |
| 110 | 5.3.3 | Migration of Identified Clients Data to New Application DB | manual | 1d | 2015-02-27 | 2015-03-02 | 109 |  | 75h |
| 111 | 5.3.4 | Smoke Test for final GOLIVE Validation | manual | 2d | 2015-03-02 | 2015-03-04 | 110 |  | 75h |
| 112 | 5.3.5 | Publish GOLIVE Notifications | manual | 1d | 2015-03-04 | 2015-03-05 | 111 |  | 8h |
| 113 | 5.3.6 | Moniter and Maintain the Stability of the Build | manual | 10d | 2015-03-05 | 2015-03-19 | 112 |  | 180h |
