# SmartTouchCRM V 2.022082014

Schedule from MS Project, 2013-10-01 to 2015-05-29, status date 2013-10-01, A marks actual dates.

## Calendars

- Standard: Mon-Fri 08:00-12:00, 13:00-17:00; Sat-Sun off.

## Resources

| Resource |
| --- |
| Ashok |
| Hari Pratap |

## Schedule

| ID | WBS | Task | Duration | Start | Finish | Complete | Constraint | Work | Actual work |
| --- | --- | --- | --- | --- | --- | --- | --- | --- | --- |
| 1 | 1 | **Product Planning Phase** | 45.12d | 2013-10-01 A | 2013-12-03 A | 100% |  | 564h | 564h |
| 2 | 1.1 | **Product Initiation Process** | 17d | 2013-10-01 A | 2013-10-23 A | 100% |  | 91h | 91h |
| 3 | 1.1.1 | Project proposal as needed and submit for final approval | 4.38d | 2013-10-01 A | 2013-10-07 A | 100% | start no earlier than 2013-10-01 | 25h | 25h |
| 4 | 1.1.2 | Core Team Joining - Business Overview Meetings | 6d | 2013-10-09 A | 2013-10-16 A | 100% | start no earlier than 2013-10-09 | 20h | 20h |
| 5 | 1.1.3 | Product Kickoff Meeting | 1d | 2013-10-17 A | 2013-10-17 A | 100% | start no earlier than 2013-10-17 | 8h | 8h |
| 6 | 1.1.4 | Project business overview meetings by alan | 3d | 2013-10-18 A | 2013-10-22 A | 100% | start no earlier than 2013-10-18 | 30h | 30h |
| 7 | 1.1.5 | Revise project proposal as needed and submit for final approval | 1d | 2013-10-23 A | 2013-10-23 A | 100% | start no earlier than 2013-10-23 | 8h | 8h |
| 8 | 1.2 | **Project Start-up Processes** | 13d | 2013-10-24 A | 2013-11-12 A | 100% |  | 35h | 35h |
| 9 | 1.2.1 | Identify Team Members & Project Management | 7d | 2013-10-24 A | 2013-11-04 A | 100% | start no earlier than 2013-10-24 | 25h | 25h |
| 10 | 1.2.2 | Identify the basic Infrastructure needs (Software and Hardware) | 5d | 2013-11-05 A | 2013-11-12 A | 100% | start no earlier than 2013-11-05 | 10h | 10h |
| 11 | 1.3 | **Project Control/Reporting Processes** | 13.12d | 2013-10-28 A | 2013-11-14 A | 100% |  | 63h | 63h |
| 12 | 1.3.1 | Establish Change Control Process | 6.12d | 2013-10-28 A | 2013-11-05 A | 100% | start no earlier than 2013-10-28 | 25h | 25h |
| 13 | 1.3.2 | Establish Issue Management Process | 3.12d | 2013-11-05 A | 2013-11-08 A | 100% | start no earlier than 2013-11-05 | 28h | 28h |
| 14 | 1.3.3 | Establish Status Tracking and Reporting Process | 4.12d | 2013-11-08 A | 2013-11-14 A | 100% | start no earlier than 2013-11-08 | 10h | 10h |
| 15 | 1.4 | **Requirements Analysis Phase** | 22.88d | 2013-10-17 A | 2013-11-18 A | 100% |  | 112h | 112h |
| 16 | 1.4.1 | Map out current and future Technology/Business Plan (Big Picture) | 4.88d | 2013-10-17 A | 2013-10-23 A | 100% | start no earlier than 2013-10-17 | 25h | 25h |
| 17 | 1.4.2 | Meeting with Alan/Robert/Grant | 0.88d | 2013-10-18 A | 2013-10-18 A | 100% | start no earlier than 2013-10-18 | 8h | 8h |
| 18 | 1.4.3 | Competitive Analysis - Documentation and Key Features | 3.88d | 2013-10-22 A | 2013-10-25 A | 100% | start no earlier than 2013-10-22 | 20h | 20h |
| 19 | 1.4.4 | Review the CRM majors in detail - feature by feature | 3.88d | 2013-10-28 A | 2013-10-31 A | 100% | start no earlier than 2013-10-28 | 20h | 20h |
| 20 | 1.4.5 | Presentation of technology/business plan to project team | 0.88d | 2013-11-11 A | 2013-11-11 A | 100% | start no earlier than 2013-11-11 | 4h | 4h |
| 21 | 1.4.6 | Statement of business requirements, impacts and prioritization of initiatives | 2.88d | 2013-11-13 A | 2013-11-15 A | 100% | start no earlier than 2013-11-13 | 15h | 15h |
| 22 | 1.4.7 | Current systems review & gap analysis | 1.88d | 2013-11-15 A | 2013-11-18 A | 100% | start no earlier than 2013-11-15 | 20h | 20h |
| 23 | 1.5 | **Functional Requirements Document (FSD)** | 30.88d | 2013-10-17 A | 2013-11-28 A | 100% |  | 35h | 35h |
| 24 | 1.5.1 | Document FSD & Review FSD | 30.88d | 2013-10-17 A | 2013-11-28 A | 100% | start no earlier than 2013-10-17 | 20h | 20h |
| 25 | 1.5.2 | Review FSD & Modifications | 30.88d | 2013-10-17 A | 2013-11-28 A | 100% | start no earlier than 2013-10-17 | 15h | 15h |

Notes:
- 3: Team Members: Ashok
- 4: Team Members: Ashok, Hari, Bharath, Ravi, Siddarth, Ramana, Nagendra, Mahesh, Spandana
- 5: Team Members: All Team Memebers
- 6: Team Members: Ashok, Hari, Bharath, Ravi, Siddarth, Ramana, Nagendra, Mahesh, Spandana
- 7: Team Members: Ashok
- 9: Team Members: Hari,Ashok
- 10: Team Members: Hari, Bharath, Ashok,Ravi
- 12: Team Members: Hari
- 13: Team Members: Hari
- 14: Team Members: Hari,Ashok
- 16: Team Members: All Team Memebers
- 17: Team Members: All Team Memebers
- 18: Team Members: Hari, Ashok, Siddarth
- 19: Team Members: Hari, Ashok, Siddarth
- 20: Team Members: Bharath, Ashok
- 21: Team Members: Hari, Bharath, Ashok, Ramana, Ravi
- 22: Team Members: Hari, Ramana, Siddarth
- 24: Team Members: Hari, Ramana, Siddarth
- 25: Team Members: Hari, Ramana, Siddarth

| ID | WBS | Task | Duration | Start | Finish | Complete | Remaining | Total slack | Constraint | Work | Actual work | Team Members | Pending Hours |
| --- | --- | --- | --- | --- | --- | --- | --- | --- | --- | --- | --- | --- | --- |
| 26 | 1.6 | **Approval of the FSD by the steering committee (Stakeholders)** | 5d | 2013-11-26 A | 2013-12-03 A | 100% |  |  |  | 8h | 8h |  |  |
| 27 | 1.6.1 | Cost/Benefit/Risk Analysis - Complex features | 2d | 2013-11-26 A | 2013-11-28 A | 100% |  |  | start no earlier than 2013-11-26 | 4h | 4h | Hari, Ramana, Siddarth |  |
| 28 | 1.6.2 | Global Strategy/Competition - Multiple Verticals - Analysis | 2d | 2013-11-29 A | 2013-12-03 A | 100% |  |  | start no earlier than 2013-11-29 | 4h | 4h | Hari, Ramana, Siddarth |  |
| 29 | 1.7 | **Resource Grouping and Defining Roles** | 19.88d | 2013-10-04 A | 2013-10-31 A | 100% |  |  |  | 100h | 100h |  |  |
| 30 | 1.7.1 | Assemble internal and external teams to launch project | 0.88d | 2013-10-04 A | 2013-10-05 A | 100% |  |  | start no earlier than 2013-10-04 | 10h | 10h | Ashok, Hari, Ravi, Bharath, Nagendra |  |
| 31 | 1.7.2 | Assemble needed GUI and system design expertise | 3.88d | 2013-10-08 A | 2013-10-12 A | 100% |  |  | start no earlier than 2013-10-08 | 30h | 30h | Ashok, Nagendra |  |
| 32 | 1.7.3 | Assemble needed domain analyst & analyse requirements | 3.88d | 2013-10-15 A | 2013-10-18 A | 100% |  |  | start no earlier than 2013-10-15 | 30h | 30h | Ashok, Ramana, Siddarth, Hari |  |
| 33 | 1.7.4 | Assemble needed programming expertise | 5.88d | 2013-10-24 A | 2013-10-31 A | 100% |  |  | start no earlier than 2013-10-24 | 30h | 30h | Ashok, Ravi, Bharath, Sivateja, NM, Hari, Sri Krishna |  |
| 34 | 1.8 | **Development Infrastructure Set-up & Deployment Planning** | 17.88d | 2013-11-05 A | 2013-11-28 A | 100% |  |  |  | 120h | 120h |  |  |
| 35 | 1.8.1 | Identify tools, technical requirements and e-infrastructure | 7d | 2013-11-05 A | 2013-11-14 A | 100% |  |  | start no earlier than 2013-11-05 | 20h | 20h | Ashok, Bharath, NM, Ravi |  |
| 36 | 1.8.2 | MSDN & Visual studio licenses | 2d | 2013-11-22 A | 2013-11-26 A | 100% |  |  | start no earlier than 2013-11-22 | 2h | 2h | Ashok |  |
| 37 | 1.8.3 | Review needed technology application, hardware, software and network requirements | 3.88d | 2013-11-18 A | 2013-11-21 A | 100% |  |  | start no earlier than 2013-11-18 | 25h | 25h | Ashok, Bharath, NM, Ravi, Hari |  |
| 38 | 1.8.4 | Identify & Discuss Disparities between existing environment and recommended | 7.88d | 2013-11-11 A | 2013-11-20 A | 100% |  |  | start no earlier than 2013-11-11 | 4h | 4h | Ashok, Bharath, NM, Ravi, Hari |  |
| 39 | 1.8.5 | Design & document infra plans with scalability & availability options & projected growth | 4.88d | 2013-11-18 A | 2013-11-22 A | 100% |  |  | start no earlier than 2013-11-18 | 16h | 16h | Ashok, Bharath, NM, Ravi, Hari |  |
| 40 | 1.8.6 | Setup Development Environment | 2d | 2013-11-26 A | 2013-11-28 A | 100% |  |  | start no earlier than 2013-11-26 | 4h | 4h | Bharath, Hari, NM, Ravi, Kiran |  |
| 41 | 1.8.7 | Set up Development Workstations | 2d | 2013-11-26 A | 2013-11-28 A | 100% |  |  | start no earlier than 2013-11-26 | 4h | 4h | Kiran, Bharath |  |
| 42 | 1.8.8 | Install Visual Stuidio.Net, TFS, Dev tools & other needed applications | 7.88d | 2013-11-19 A | 2013-11-28 A | 100% |  |  | start no earlier than 2013-11-19 | 45h | 45h | Kiran, Bharath |  |
| 43 | 2 | **Product Implementation Phase (Alpha)** | 235d | 2013-10-25 A | 2014-09-19 | 87% | 30.74d | 180.88d |  | 13188h | 12454h |  | 1283 hrs |
| 44 | 2.1 | **Design / Review Module Moqups** | 38d | 2013-10-25 A | 2013-12-18 A | 100% |  |  |  | 560h | 560h |  |  |
| 45 | 2.1.1 | Contacts Module | 6.12d | 2013-10-25 A | 2013-11-04 A | 100% |  |  | start no earlier than 2013-10-25 | 60h | 60h | Nagendra, Spandana, Mahesh, Bharath, Ramana, Hari |  |
| 46 | 2.1.2 | Campaigns Module | 7.38d | 2013-11-01 A | 2013-11-12 A | 100% |  |  | start no earlier than 2013-11-01 | 60h | 60h | Nagendra, Spandana, Mahesh, Bharath, Ramana, Hari |  |
| 47 | 2.1.3 | Marketing Automation | 5.75d | 2013-11-12 A | 2013-11-19 A | 100% |  |  | start no earlier than 2013-11-12 | 75h | 75h | Nagendra, Spandana, Mahesh, Bharath, Ramana, Hari |  |
| 48 | 2.1.4 | Internet Forms / Lead Capture | 6.12d | 2013-11-12 A | 2013-11-20 A | 100% |  |  | start no earlier than 2013-11-12 | 45h | 45h | Nagendra, Spandana, Mahesh, Bharath, Ramana, Hari |  |
| 49 | 2.1.5 | Personal Settings | 6.12d | 2013-11-14 A | 2013-11-22 A | 100% |  |  | start no earlier than 2013-11-14 | 45h | 45h | Nagendra, Spandana, Mahesh, Bharath, Ramana, Hari |  |
| 50 | 2.1.6 | Account Admin Settings | 5.88d | 2013-11-21 A | 2013-11-28 A | 100% |  |  | start no earlier than 2013-11-21 | 45h | 45h | Nagendra, Spandana, Mahesh, Bharath, Ramana, Hari |  |
| 51 | 2.1.7 | Super Admin - Accounts Management | 2.88d | 2013-11-26 A | 2013-11-28 A | 100% |  |  | start no earlier than 2013-11-26 | 45h | 45h | Nagendra, Spandana, Mahesh, Bharath, Ramana, Hari |  |
| 52 | 2.1.8 | Account Dashboard | 3d | 2013-11-29 A | 2013-12-04 A | 100% |  |  | start no earlier than 2013-11-29 | 60h | 60h | Nagendra, Spandana, Mahesh, Bharath, Ramana, Hari |  |
| 53 | 2.1.9 | Reports | 6.12d | 2013-12-05 A | 2013-12-13 A | 100% |  |  | start no earlier than 2013-12-05 | 75h | 75h | Nagendra, Spandana, Mahesh, Bharath, Ramana, Hari |  |
| 54 | 2.1.10 | 3rd Party & External Components Integrations | 3d | 2013-12-13 A | 2013-12-18 A | 100% |  |  | start no earlier than 2013-12-13 | 50h | 50h | Nagendra, Spandana, Mahesh, Bharath, Ramana, Hari |  |

| ID | WBS | Task | Duration | Start | Finish | Predecessors | Complete | Remaining | Total slack | Constraint | Work | Actual work |
| --- | --- | --- | --- | --- | --- | --- | --- | --- | --- | --- | --- | --- |
| 55 | 2.2 | **Finalizing Prototypes & Interface Documents - Business Sign-off** | 47.84d | 2013-11-01 A | 2014-01-07 A |  | 100% |  |  |  | 940h | 940h |
| 56 | 2.2.1 | Contacts Module | 5.41d | 2013-11-01 A | 2013-11-08 A | 45 | 100% |  |  | start no earlier than 2013-11-01 | 80h | 80h |
| 57 | 2.2.2 | Campaigns Module | 6.08d | 2013-11-08 A | 2013-11-18 A | 56 | 100% |  |  | start no earlier than 2013-11-08 | 85h | 85h |
| 58 | 2.2.3 | Marketing Automation | 5.46d | 2013-11-15 A | 2013-11-22 A | 57 | 100% |  |  | start no earlier than 2013-11-15 | 100h | 100h |
| 59 | 2.2.4 | Internet Forms / Lead Capture | 5.66d | 2013-11-22 A | 2013-11-29 A | 58 | 100% |  |  | start no earlier than 2013-11-22 | 75h | 75h |
| 60 | 2.2.5 | Personal Settings | 8.01d | 2013-12-02 A | 2013-12-12 A | 59 | 100% |  |  | start no earlier than 2013-12-02 | 100h | 100h |
| 61 | 2.2.6 | Account Admin Settings | 8.04d | 2013-12-09 A | 2013-12-19 A | 60 | 100% |  |  | start no earlier than 2013-12-09 | 100h | 100h |
| 62 | 2.2.7 | Super Admin - Accounts Management | 5.47d | 2013-12-17 A | 2013-12-24 A | 61 | 100% |  |  | start no earlier than 2013-12-17 | 100h | 100h |
| 63 | 2.2.8 | Account Dashboard | 6.08d | 2013-12-20 A | 2013-12-30 A | 62 | 100% |  |  | start no earlier than 2013-12-20 | 90h | 90h |
| 64 | 2.2.9 | Reports | 7.45d | 2013-12-25 A | 2014-01-03 A | 63 | 100% |  |  | start no earlier than 2013-12-25 | 110h | 110h |
| 65 | 2.2.10 | 3rd Party & External Components Integrations | 3.85d | 2014-01-02 A | 2014-01-07 A | 64 | 100% |  |  | start no earlier than 2014-01-02 | 100h | 100h |
| 66 | 2.3 | **Development Design Plan** | 169d | 2013-11-08 A | 2014-07-03 |  | 99% | 0.36d | 236.88d |  | 770h | 770h |
| 67 | 2.3.1 | Design and Document Solution Architecture. | 4d | 2013-11-20 A | 2013-11-26 |  | 84% | 0.62d | 393.88d | start no earlier than 2013-11-20 | 45h | 45h |
| 68 | 2.3.2 | Architectural Design Reviews & Technical Meetings | 8.38d | 2013-12-06 A | 2013-12-18 A |  | 100% |  |  | start no earlier than 2013-12-06 | 80h | 80h |
| 69 | 2.3.3 | Establishing Coding Guidelines and Developers Code Standards | 3.75d | 2013-11-14 A | 2013-11-19 A |  | 100% |  |  | start no earlier than 2013-11-14 | 60h | 60h |
| 70 | 2.3.4 | Design and Review Deployment Strategy | 3.88d | 2013-11-15 A | 2013-11-20 A |  | 100% |  |  | start no earlier than 2013-11-15 | 45h | 45h |
| 71 | 2.3.5 | Identify the Components for POC's and Validating Components | 160d | 2013-11-21 A | 2014-07-03 A |  | 100% |  |  | finish no earlier than 2014-07-01 | 120h | 120h |
| 72 | 2.3.6 | Design & Set-up Solution Foundation Framwork | 2.88d | 2013-11-26 A | 2013-11-28 A |  | 100% |  |  | start no earlier than 2013-11-26 | 75h | 75h |
| 73 | 2.3.7 | Architecture Guidelines Design, R&D on Tools and APIs. | 9.12d | 2013-12-03 A | 2013-12-16 A |  | 100% |  |  | start no earlier than 2013-12-03 | 80h | 80h |
| 74 | 2.3.8 | DB Architecture Design Review and Analysis | 142d | 2013-12-14 A | 2014-07-01 |  | 99% | 0.12d | 238d | finish no earlier than 2014-07-01 | 45h | 45h |
| 75 | 2.3.9 | Application DB Schema Model Design Review | 3.88d | 2013-12-18 A | 2013-12-23 A |  | 100% |  |  | start no earlier than 2013-12-18 | 60h | 60h |
| 76 | 2.3.10 | Review DB Data Model Design Approaches & Establish DB Design Standards | 3.88d | 2013-12-24 A | 2013-12-27 A |  | 100% |  |  | start no earlier than 2013-12-24 | 75h | 75h |
| 77 | 2.3.11 | Review Requirements documents & Plan for Development | 3.12d | 2014-01-03 A | 2014-01-08 A |  | 100% |  |  | start no earlier than 2014-01-03 | 75h | 75h |
| 78 | 2.3.12 | Approval by project team of preliminary Solution design document | 2.88d | 2013-11-08 A | 2013-11-12 A |  | 100% |  |  | start no earlier than 2013-11-08 | 10h | 10h |

Notes:
- 56: Team Members: Nagendra, Spandana, Mahesh, Bharath, Ramana, Hari
- 57: Team Members: Nagendra, Spandana, Mahesh, Bharath, Ramana, Hari
- 58: Team Members: Nagendra, Spandana, Mahesh, Bharath, Ramana, Hari
- 59: Team Members: Nagendra, Spandana, Mahesh, Bharath, Ramana, Hari
- 60: Team Members: Nagendra, Spandana, Mahesh, Bharath, Ramana, Hari
- 61: Team Members: Nagendra, Spandana, Mahesh, Bharath, Ramana, Hari
- 62: Team Members: Nagendra, Spandana, Mahesh, Bharath, Ramana, Hari
- 63: Team Members: Nagendra, Spandana, Mahesh, Bharath, Ramana, Hari
- 64: Team Members: Nagendra, Spandana, Mahesh, Bharath, Ramana, Hari
- 65: Team Members: Nagendra, Spandana, Mahesh, Bharath, Ramana, Hari
- 67: Team Members: Bharath, Hari, NM, Ravi
- 68: Team Members: Ashok, Bharath, NM, Ravi
- 69: Team Members: Bharath, NM, Ravi
- 70: Team Members: Bharath, NM, Ravi, Hari, Ashok
- 71: Team Members: Bharath, NM, Ravi
- 72: Team Members: Bharath, Hari, NM, Ravi
- 73: Team Members: Bharath, NM, Ravi
- 74: Team Members: Bharath, NM, Ravi, Hari, Ashok
- 75: Team Members: Bharath, NM, Ravi, Hari, Ashok, Sri Krishna, Siva Teja
- 76: Team Members: Bharath, NM, Ravi, Hari, Ashok, Sri Krishna, Siva Teja
- 77: Team Members: Bharath, Hari, NM, Ravi
- 78: Team Members: Bharath, NM, Ravi, Hari, Ashok, Siva Teja, Sri Krishna, Mallikarjun

| ID | WBS | Task | Duration | Start | Finish | Predecessors | Complete | Remaining | Total slack | Constraint | Work | Actual work | Pending Hours | Team Members |
| --- | --- | --- | --- | --- | --- | --- | --- | --- | --- | --- | --- | --- | --- | --- |
| 79 | 2.4 | **QA Test Preparations & Planning** | 56.12d | 2013-11-05 A | 2014-01-22 |  | 99% | 0.2d | 352.75d |  | 490h | 485h | 5 hrs |  |
| 80 | 2.4.1 | Design & Document Test Strategy Plan | 7.88d | 2013-11-05 A | 2013-11-14 A |  | 100% |  |  | start no earlier than 2013-11-05 | 60h | 60h |  | Ramana, Promodh, Sankeerth, Mamata, Hari |
| 81 | 2.4.2 | Identify Scope for Test Cases and Review Interface Documents | 39.88d | 2013-11-12 A | 2014-01-06 A |  | 100% |  |  | start no earlier than 2013-11-12 | 45h | 45h |  | Ramana, Promodh, Sankeerth, Mamata, Hari |
| 82 | 2.4.3 | Document Test Cases for Final Signed-off Modules | 40.12d | 2013-11-12 A | 2014-01-07 A |  | 100% |  |  | start no earlier than 2013-11-12 | 200h | 200h |  | Ramana, Promodh, Sankeerth, Mamata, Hari |
| 83 | 2.4.4 | Review and Finalize Test Cases | 3.12d | 2014-01-07 A | 2014-01-10 |  | 89% | 0.36d | 360.75d | start no earlier than 2014-01-07 | 65h | 60h | 5 hrs | Ramana, Promodh, Sankeerth, Mamata, Hari |
| 84 | 2.4.5 | Identify & Define UI Test Guidelines | 3.12d | 2014-01-10 A | 2014-01-15 A |  | 100% |  |  | start no earlier than 2014-01-10 | 75h | 75h |  | Ramana, Promodh, Sankeerth, Mamata, Hari |
| 85 | 2.4.6 | Evaluate and Finlize on QA Load/Performance/ Stress Testing Tools | 5.12d | 2014-01-15 A | 2014-01-22 A |  | 100% |  |  | start no earlier than 2014-01-15 | 45h | 45h |  | Ramana, Promodh, Sankeerth, Mamata, Hari |
| 86 | 2.5 | **Application Designing & Development Preparation** | 158.88d | 2013-12-03 A | 2014-07-11 |  | 86% | 21.84d | 230d |  | 1140h | 1120h | 20 hrs |  |
| 87 | 2.5.1 | **SOA Practices** | 8.88d | 2013-12-03 A | 2013-12-13 A |  | 100% |  |  |  | 275h | 275h |  |  |
| 88 | 2.5.1.1 | Identify Repositories | 1.88d | 2013-12-03 A | 2013-12-04 A |  | 100% |  |  | start no earlier than 2013-12-03 | 45h | 45h |  | Bharath, NM, Ravi, Sivateja |
| 89 | 2.5.1.2 | Building Repositories for Accounts | 1.88d | 2013-12-04 A | 2013-12-05 A |  | 100% |  |  | start no earlier than 2013-12-04 | 75h | 75h |  | Bharath, NM, Ravi, Sivateja |
| 90 | 2.5.1.3 | Building Repositories for CRM Activities | 1.88d | 2013-12-04 A | 2013-12-05 A |  | 100% |  |  | start no earlier than 2013-12-04 | 75h | 75h |  | Bharath, NM, Ravi, Sivateja |
| 91 | 2.5.1.4 | DEV Testing of repositories. | 0.88d | 2013-12-06 A | 2013-12-07 A |  | 100% |  |  | start no earlier than 2013-12-06 | 30h | 30h |  | Bharath, NM, Ravi, Sivateja |
| 92 | 2.5.1.5 | Odata,Web API - Standard Library Design and Development | 3.88d | 2013-12-10 A | 2013-12-13 A |  | 100% |  |  | start no earlier than 2013-12-10 | 50h | 50h |  | Bharath, NM, Ravi, Sivateja |
| 93 | 2.5.2 | **Web UI Application Design Practices** | 10d | 2013-12-17 A | 2013-12-31 A |  | 100% |  |  |  | 240h | 240h |  |  |
| 94 | 2.5.2.1 | MVC,MVVM Architectural View - Model Design | 2.88d | 2013-12-17 A | 2013-12-19 A |  | 100% |  |  | start no earlier than 2013-12-17 | 60h | 60h |  | Bharath, NM, Ravi, Sivateja |
| 95 | 2.5.2.2 | Identify UI Components for Integration and Designing | 4d | 2013-12-18 A | 2013-12-24 A |  | 100% |  |  | start no earlier than 2013-12-18 | 80h | 80h |  | Bharath, NM, Ravi, Sivateja, Mahesh, Spandana |
| 96 | 2.5.2.3 | Kendo UI - Framwork Update and Integration | 5d | 2013-12-24 A | 2013-12-31 A | 95 | 100% |  |  | start no earlier than 2013-12-24 | 100h | 100h |  | Bharath, NM, Ravi, Sivateja, Mahesh, Spandana |
| 97 | 2.5.3 | **Client Side Libraries** | 7.88d | 2013-12-11 A | 2013-12-20 A |  | 100% |  |  |  | 225h | 225h |  |  |
| 98 | 2.5.3.1 | Identify Jquery Bundels | 2.88d | 2013-12-11 A | 2013-12-14 A |  | 100% |  |  | start no earlier than 2013-12-11 | 50h | 50h |  | Bharath, NM, Ravi, Sivateja, Mahesh, Spandana |
| 99 | 2.5.3.2 | Identify Scripts Essential | 2.88d | 2013-12-11 A | 2013-12-14 A |  | 100% |  |  | start no earlier than 2013-12-11 | 50h | 50h |  | Bharath, NM, Ravi, Sivateja, Mahesh, Spandana |
| 100 | 2.5.3.3 | Identify 3rd Party Components Required (Kendo UI, Knockout JS, Node JS) | 2.88d | 2013-12-11 A | 2013-12-14 A |  | 100% |  |  | start no earlier than 2013-12-11 | 75h | 75h |  | Bharath, NM, Ravi, Sivateja, Mahesh, Spandana |
| 101 | 2.5.3.4 | Creating Solution Library Plan | 1.88d | 2013-12-19 A | 2013-12-20 A |  | 100% |  |  | start no earlier than 2013-12-19 | 50h | 50h |  | Bharath, NM, Ravi, Sivateja |
| 102 | 2.5.4 | **Caching & Exception Logging** | 5.88d | 2014-01-02 A | 2014-01-09 A |  | 100% |  |  |  | 200h | 200h |  |  |
| 103 | 2.5.4.1 | Application Caching | 5.12d | 2014-01-02 A | 2014-01-09 A |  | 100% |  |  | start no earlier than 2014-01-02 | 125h | 125h |  | Bharath, NM, Ravi, Sivateja |
| 104 | 2.5.4.2 | Exception Handling & Logging | 5.88d | 2014-01-02 A | 2014-01-09 A |  | 100% |  |  | start no earlier than 2014-01-02 | 75h | 75h |  | Bharath, NM, Ravi, Sivateja |

| ID | WBS | Task | Duration | Start | Finish | Predecessors | Complete | Remaining | Total slack | Constraint | Work | Actual work | Pending Hours | Team Members |
| --- | --- | --- | --- | --- | --- | --- | --- | --- | --- | --- | --- | --- | --- | --- |
| 105 | 2.5.5 | **Application Security** | 122.88d | 2014-01-22 A | 2014-07-11 |  | 46% | 66.16d | 230d |  | 200h | 180h | 20 hrs |  |
| 106 | 2.5.5.1 | MembershipProvider for authentication & authorization | 5d | 2014-01-22 A | 2014-01-29 A |  | 100% |  |  | start no earlier than 2014-01-22 | 125h | 125h | 0 hrs | Bharath, NM, Ravi, Sivateja |
| 107 | 2.5.5.2 | Change Requests and Enhancements | 10d | 2014-06-30 A | 2014-07-11 |  | 19% | 8.08d | 230d | finish no earlier than 2014-07-11 | 75h | 55h | 20 hrs |  |
| 108 | 2.6 | **Continuous Integration Setup** | 9d | 2013-12-21 A | 2014-01-02 A |  | 100% |  |  |  | 400h | 400h |  |  |
| 109 | 2.6.1 | TFS - Build Repositories Confirguration Set-up | 2d | 2013-12-21 A | 2013-12-24 A |  | 100% |  |  | start no earlier than 2013-12-21 | 50h | 50h |  | Bharath, NM, Kiran, Hari |
| 110 | 2.6.2 | Source Controller | 1.88d | 2013-12-26 A | 2013-12-28 A |  | 100% |  |  | start no earlier than 2013-12-26 | 100h | 100h |  | Bharath, NM, Kiran, Hari |
| 111 | 2.6.3 | Build Management | 2.88d | 2013-12-31 A | 2014-01-02 A |  | 100% |  |  | start no earlier than 2013-12-31 | 250h | 250h |  | Bharath, NM, Kiran, Hari |
| 112 | 2.7 | **Functional Development** | 174d | 2014-01-20 A | 2014-09-19 |  | 76% | 41.99d | 180.88d |  | 8233h | 7694.01h | 978 hrs |  |
| 113 | 2.7.1 | **Design & Develop Contacts Module** | 164.88d | 2014-01-20 A | 2014-09-05 |  | 93% | 12.3d | 190d |  | 1021h | 1001h | 20 hrs |  |
| 114 | 2.7.1.1 | Design Review and Finalize Data Model | 2d | 2014-01-20 A | 2014-01-22 A |  | 100% |  |  |  | 50h | 50h |  | Bharath,NM, Siva Teja, Sri Krishna |
| 115 | 2.7.1.2 | Integration of Final UI from Prototypes | 5d | 2014-01-22 A | 2014-01-29 A | 114 | 100% |  |  |  | 75h | 75h |  | Bharath, NM, Siva Teja, Mahesh, Spandana |
| 116 | 2.7.1.3 | Development of Module | 20d | 2014-01-22 A | 2014-02-19 A | 115 | 100% |  |  |  | 375h | 375h | 10 hrs | Bharath, Siva Teja, Mallikarjun, Siva, Avinash, Jeevan |
| 117 | 2.7.1.4 | Change Requests and Enhancements | 50d | 2014-06-30 A | 2014-09-05 |  | 88% | 5.89d | 190d | finish no earlier than 2014-09-05 | 346h | 326h | 46 hrs |  |
| 118 | 2.7.1.5 | Functional Testing of Module | 1d | 2014-02-19 A | 2014-02-20 A | 116 | 100% |  |  |  | 75h | 75h | 10 hrs | Ramana, Sankeerth, Pramodh, Mamata, Bharath, Siva Teja |
| 119 | 2.7.1.6 | Bug Fixing & Stabilize code for Contacts | 1d | 2014-02-20 A | 2014-02-21 A | 118 | 100% |  |  |  | 100h | 100h | 10 hrs | Ramana, Sankeerth, Pramodh, Mamata, Bharath, Siva Teja |
| 120 | 2.7.2 | **Design & Develop Campaigns Module** | 150d | 2014-02-10 A | 2014-09-05 |  | 81% | 28.97d | 190d |  | 1079h | 1029h | 50 hrs |  |
| 121 | 2.7.2.1 | Design Review and Finalize Data Model | 3d | 2014-02-10 A | 2014-02-12 A |  | 100% |  |  | start no earlier than 2014-02-08 | 50h | 50h |  |  |
| 122 | 2.7.2.2 | Integration of Final UI from Prototypes | 1d | 2014-02-13 A | 2014-02-13 A | 121 | 100% |  |  | start no earlier than 2014-02-12 | 75h | 75h |  |  |
| 123 | 2.7.2.3 | Development of Module | 30d | 2014-02-14 A | 2014-03-27 A | 122 | 100% |  |  | start no earlier than 2014-02-13 | 450h | 450h | 15 hrs |  |
| 124 | 2.7.2.4 | Change Requests and Enhancements | 49.88d | 2014-06-30 A | 2014-09-05 |  | 77% | 11.68d | 190d | finish no earlier than 2014-09-05 | 204h | 189.17h | 14 hrs |  |
| 125 | 2.7.2.5 | Email Preferances - Updates and Changes | 10d | 2014-08-19 A | 2014-09-02 |  | 22% | 7.8d | 193.88d | start no earlier than 2014-08-19 | 80h | 44.83h | 65 hrs |  |
| 126 | 2.7.2.6 | Functional Testing of Module | 5d | 2014-03-28 A | 2014-04-03 A | 123 | 100% |  |  | start no earlier than 2014-03-27 | 100h | 100h | 15 hrs |  |
| 127 | 2.7.2.7 | Bug Fixing & Stabilize code for Campaigns | 2d | 2014-04-04 A | 2014-04-07 A | 126 | 100% |  |  | start no earlier than 2014-04-03 | 120h | 120h | 15 hrs |  |
| 128 | 2.7.3 | **Design & Develop Internet Forms/Lead Captures Module** | 102d | 2014-04-03 A | 2014-08-22 |  | 61% | 39.68d | 200d |  | 859h | 829h | 30 hrs |  |
| 129 | 2.7.3.1 | Design Review and Finalize Data Model | 2d | 2014-04-03 A | 2014-04-04 A |  | 100% |  |  | start no earlier than 2014-04-02 | 75h | 75h | 0 hrs |  |
| 130 | 2.7.3.2 | Integration of Final UI from Prototypes | 1.62d | 2014-04-07 A | 2014-04-08 A | 129 | 100% |  |  | start no earlier than 2014-04-04 | 55h | 55h | 0 hrs |  |
| 131 | 2.7.3.3 | Development of Module | 15d | 2014-04-08 A | 2014-04-28 A | 130 | 100% |  |  | start no earlier than 2014-04-07 | 425h | 425h | 10 hrs |  |
| 132 | 2.7.3.4 | Change Requests and Enhancements | 40d | 2014-06-30 A | 2014-08-22 |  | 37% | 25.14d | 200d | finish no earlier than 2014-08-22 | 64h | 34h | 14 hrs |  |
| 133 | 2.7.3.5 | Functional Testing of Module | 4d | 2014-04-29 A | 2014-05-02 A | 131 | 100% |  |  | start no earlier than 2014-04-28 | 100h | 100h | 10 hrs |  |
| 134 | 2.7.3.6 | Bug Fixing & Stabilize code for Internet Forms / Lead Captures | 2d | 2014-05-05 A | 2014-05-06 A | 133 | 100% |  |  | start no earlier than 2014-05-02 | 140h | 140h | 10 hrs |  |

| ID | WBS | Task | Type | Duration | Start | Finish | Predecessors | Complete | Remaining | Total slack | Free slack | Constraint | Work | Actual work | Pending Hours |
| --- | --- | --- | --- | --- | --- | --- | --- | --- | --- | --- | --- | --- | --- | --- | --- |
| 135 | 2.7.4 | **Design & Develop Personal Settings Module** |  | 99d | 2014-04-08 A | 2014-08-22 |  | 85% | 14.68d | 200d |  |  | 935h | 925h | 10 hrs |
| 136 | 2.7.4.1 | Design Review and Finalize Data Model |  | 2d | 2014-04-08 A | 2014-04-09 A | 130 | 100% |  |  |  | start no earlier than 2014-04-07 | 75h | 75h | 0 hrs |
| 137 | 2.7.4.2 | Integration of Final UI from Prototypes |  | 1d | 2014-04-10 A | 2014-04-10 A | 136 | 100% |  |  |  | start no earlier than 2014-04-09 | 75h | 75h | 0 hrs |
| 138 | 2.7.4.3 | Development of Module |  | 10d | 2014-04-11 A | 2014-04-24 A | 137 | 100% |  |  |  | start no earlier than 2014-04-10 | 420h | 420h | 10 hrs |
| 139 | 2.7.4.4 | Change Requests and Enhancements |  | 40d | 2014-06-30 A | 2014-08-22 |  | 78% | 8.75d | 200d |  | finish no earlier than 2014-08-22 | 80h | 70h | 10 hrs |
| 140 | 2.7.4.5 | Functional Testing of Module |  | 4d | 2014-04-25 A | 2014-04-30 A | 138 | 100% |  |  |  | start no earlier than 2014-04-24 | 125h | 125h | 10 hrs |
| 141 | 2.7.4.6 | Bug Fixing & Stabilize code for Personal Settings |  | 2d | 2014-05-01 A | 2014-05-02 A | 140 | 100% |  |  |  | start no earlier than 2014-04-30 | 160h | 160h | 10 hrs |
| 142 | 2.7.5 | **Design & Develop Account Admin Settings Module** |  | 85d | 2014-05-05 A | 2014-08-29 |  | 44% | 47.42d | 195d |  |  | 874h | 825h | 49 hrs |
| 143 | 2.7.5.1 | Design Review and Finalize Data Model |  | 2d | 2014-05-05 A | 2014-05-06 A | 133 | 100% |  |  |  | start no earlier than 2014-05-02 | 80h | 80h | 0 hrs |
| 144 | 2.7.5.2 | Integration of Final UI from Prototypes |  | 1d | 2014-05-07 A | 2014-05-07 A | 143 | 100% |  |  |  | start no earlier than 2014-05-06 | 120h | 120h | 0 hrs |
| 145 | 2.7.5.3 | Development of Module |  | 25d | 2014-05-08 A | 2014-06-11 A | 144 | 100% |  |  |  | start no earlier than 2014-05-07 | 400h | 400h | 10 hrs |
| 146 | 2.7.5.4 | Change Requests and Enhancements |  | 45d | 2014-06-30 A | 2014-08-29 |  | 2% | 44.07d | 195d |  | finish no earlier than 2014-08-29 | 54h | 5h | 24 hrs |
| 147 | 2.7.5.5 | Functional Testing of Module |  | 4d | 2014-06-12 A | 2014-06-17 A | 145 | 100% |  |  |  | start no earlier than 2014-06-11 | 100h | 100h | 10 hrs |
| 148 | 2.7.5.6 | Bug Fixing & Stabilize code for Account Admin Settings |  | 2d | 2014-06-18 A | 2014-06-19 A | 147 | 100% |  |  |  | start no earlier than 2014-06-17 | 120h | 120h | 15 hrs |
| 149 | 2.7.6 | **Design & Develop Super Admin - Accounts Management Module** |  | 87d | 2014-05-01 A | 2014-08-29 |  | 64% | 31.55d | 195d |  |  | 910h | 860.01h | 50 hrs |
| 150 | 2.7.6.1 | Design Review and Finalize Data Model |  | 2d | 2014-05-01 A | 2014-05-02 A | 140 | 100% |  |  |  | start no earlier than 2014-04-30 | 80h | 80h | 0 hrs |
| 151 | 2.7.6.2 | Integration of Final UI from Prototypes |  | 1d | 2014-05-05 A | 2014-05-05 A | 150 | 100% |  |  |  | start no earlier than 2014-05-02 | 100h | 100h | 0 hrs |
| 152 | 2.7.6.3 | Development of Module |  | 15d | 2014-05-06 A | 2014-05-26 | 151 | 96% | 0.67d | 0.9d | 0d | start no earlier than 2014-05-05 | 450h | 430h | 20 hrs |
| 153 | 2.7.6.4 | Change Requests and Enhancements |  | 10d | 2014-08-18 | 2014-08-29 |  |  |  | 39.12d |  | finish no earlier than 2014-08-29 |  |  |  |
| 154 | 2.7.6.5 | Functional Testing of Module |  | 1d | 2014-05-27 A | 2014-05-27 | 152 | 90% | 0.1d | 0.89d | 0d | start no earlier than 2014-05-26 | 100h | 90h | 10 hrs |
| 155 | 2.7.6.6 | Bug Fixing & Stabilize code for Super Admin - Accounts Management |  | 1d | 2014-05-28 A | 2014-05-28 | 154 | 89% | 0.11d | 262d |  | start no earlier than 2014-05-27 | 180h | 160.01h | 20 hrs |
| 156 | 2.7.7 | **Design & Develop Opportunities Module** |  | 48d | 2014-06-18 A | 2014-08-22 |  | 73% | 12.76d | 200d |  |  | 795h | 750h | 45 hrs |
| 157 | 2.7.7.1 | Design Review and Finalize Data Model |  | 2d | 2014-06-18 A | 2014-06-19 A | 147 | 100% |  |  |  | start no earlier than 2014-06-17 | 50h | 50h | 0 hrs |
| 158 | 2.7.7.2 | Integration of Final UI from Prototypes |  | 1d | 2014-06-20 A | 2014-06-20 A | 157 | 100% |  |  |  | start no earlier than 2014-06-19 | 60h | 60h | 0 hrs |
| 159 | 2.7.7.3 | Development of Module |  | 20d | 2014-06-23 A | 2014-07-18 A | 158 | 100% |  |  |  | start no earlier than 2014-06-20 | 325h | 325h | 25 hrs |
| 160 | 2.7.7.4 | Change Requests and Enhancements | manual | 40.12d | 2014-06-30 A | 2014-08-22 |  | 54% | 18.38d |  |  | finish no earlier than 2014-07-11 | 185h | 140h | 35 hrs |
| 161 | 2.7.7.5 | Functional Testing of Module |  | 4d | 2014-07-21 A | 2014-07-24 A | 159 | 100% |  |  |  | start no earlier than 2014-07-18 | 100h | 100h | 10 hrs |
| 162 | 2.7.7.6 | Bug Fixing & Stabilize code for Reports |  | 2d | 2014-07-25 A | 2014-07-28 A | 161 | 100% |  |  |  | start no earlier than 2014-07-24 | 75h | 75h | 25 hrs |

| ID | WBS | Task | Type | Duration | Start | Finish | Predecessors | Complete | Remaining | Total slack | Free slack | Constraint | Work | Actual work | Pending Hours |
| --- | --- | --- | --- | --- | --- | --- | --- | --- | --- | --- | --- | --- | --- | --- | --- |
| 163 | 2.7.8 | **Design & Develop Entitlements** |  | 29d | 2014-06-18 A | 2014-07-28 |  | 94% | 1.86d | 219d |  |  | 160h | 150h | 10 hrs |
| 164 | 2.7.8.1 | Design Review and Finalize Data Model |  | 2d | 2014-06-18 A | 2014-06-19 A | 147 | 100% |  |  |  | start no earlier than 2014-06-17 | 20h | 20h | 0 hrs |
| 165 | 2.7.8.2 | Integration of Final UI from Prototypes |  | 1d | 2014-06-20 A | 2014-06-20 A | 164 | 100% |  |  |  | start no earlier than 2014-06-19 | 20h | 20h | 0 hrs |
| 166 | 2.7.8.3 | Change Requests and Enhancements | manual | 2.16d | 2014-06-30 A | 2014-07-02 A |  | 100% |  |  |  | finish no earlier than 2014-07-11 | 40h | 40h | 0 hrs |
| 167 | 2.7.8.4 | Development of Module |  | 20d | 2014-06-23 A | 2014-07-18 A | 165 | 100% |  |  |  | start no earlier than 2014-06-20 | 50h | 50h | 5 hrs |
| 168 | 2.7.8.5 | Functional Testing of Module |  | 4d | 2014-07-21 A | 2014-07-24 A | 167 | 100% |  |  |  | start no earlier than 2014-07-18 | 20h | 20h | 10 hrs |
| 169 | 2.7.8.6 | Bug Fixing & Stabilize code for Reports |  | 2d | 2014-07-25 | 2014-07-28 | 168 |  |  | 63.12d |  | start no earlier than 2014-07-24 | 10h |  | 10 hrs |
| 170 | 2.7.9 | **Design & Develop Advanced Search** |  | 29d | 2014-06-18 A | 2014-07-28 |  | 95% | 1.55d | 219d |  |  | 380h | 360h | 20 hrs |
| 171 | 2.7.9.1 | Design Review and Finalize Data Model |  | 2d | 2014-06-18 A | 2014-06-19 A | 147 | 100% |  |  |  | start no earlier than 2014-06-17 | 40h | 40h |  |
| 172 | 2.7.9.2 | Integration of Final UI from Prototypes |  | 1d | 2014-06-20 A | 2014-06-20 | 171 | 25% | 0.75d | 245d |  | start no earlier than 2014-06-19 | 30h | 30h |  |
| 173 | 2.7.9.3 | Development of Module |  | 20d | 2014-06-23 A | 2014-07-18 A | 172 | 100% |  |  |  | start no earlier than 2014-06-20 | 170h | 170h | 20 hrs |
| 174 | 2.7.9.4 | Change Requests and Enhancements |  | 10d | 2014-06-30 A | 2014-07-11 A |  | 100% |  |  |  | finish no earlier than 2014-07-11 | 80h | 80h | 20 hrs |
| 175 | 2.7.9.5 | Functional Testing of Module |  | 4d | 2014-07-21 A | 2014-07-24 A | 173 | 100% |  |  |  | start no earlier than 2014-07-18 | 30h | 30h | 10 hrs |
| 176 | 2.7.9.6 | Bug Fixing & Stabilize code for Reports |  | 2d | 2014-07-25 A | 2014-07-28 | 175 | 33% | 1.33d | 219d |  | start no earlier than 2014-07-24 | 30h | 10h | 20 hrs |
| 177 | 2.7.10 | **Design & Develop 3rd Party Components and Integrations** |  | 41d | 2014-07-24 A | 2014-09-19 |  | 95% | 1.93d | 180.88d |  |  | 940h | 850h | 90 hrs |
| 178 | 2.7.10.1 | Design Review and Finalize Data Model |  | 5d | 2014-07-24 A | 2014-07-31 A | 161, 168, 175 | 100% |  |  |  | start no earlier than 2014-07-24 | 125h | 125h | 15 hrs |
| 179 | 2.7.10.2 | Integration of Final UI from Prototypes |  | 3d | 2014-07-31 A | 2014-08-05 A | 178 | 100% |  |  |  | start no earlier than 2014-07-31 | 160h | 160h | 10 hrs |
| 180 | 2.7.10.3 | Development of Module |  | 25d | 2014-08-05 A | 2014-09-09 A | 179 | 100% |  |  |  | start no earlier than 2014-08-05 | 425h | 425h | 75 hrs |
| 181 | 2.7.10.4 | Functional Testing of Module |  | 5d | 2014-09-09 A | 2014-09-16 A | 180 | 100% |  |  |  | start no earlier than 2014-09-09 | 90h | 90h | 30 hrs |
| 182 | 2.7.10.5 | Bug Fixing & Stabilize code for 3rd Party Components & Integrations |  | 3d | 2014-09-16 A | 2014-09-19 | 181 | 36% | 1.93d | 180.88d |  | start no earlier than 2014-09-16 | 140h | 50h | 60 hrs |
| 183 | 2.7.11 | **Open API to third party developers** |  | 24d | 2014-06-30 A | 2014-07-31 |  | 46% | 12.91d | 181.12d |  |  | 280h | 115h | 165 hrs |
| 184 | 2.7.11.1 | Open API to third party developers |  | 4d | 2014-07-25 A | 2014-07-30 | 161, 168, 175 | 40% | 2.4d | 0.33d | 0d | start no earlier than 2014-07-24 | 125h | 50h | 75 hrs |
| 185 | 2.7.11.2 | Entitlement based updates to the model and enhancements |  | 10d | 2014-06-30 A | 2014-07-11 |  | 50% | 5d | 195.12d |  | finish no earlier than 2014-07-11 | 80h | 40h | 40 hrs |
| 186 | 2.7.11.3 | Unit & Integration Testing |  | 1d | 2014-07-31 A | 2014-07-31 | 184 | 33% | 0.67d | 4d | 0d | start no earlier than 2014-07-30 | 75h | 25h | 50 hrs |

| ID | WBS | Task | Type | Duration | Start | Finish | Predecessors | Complete | Remaining | Total slack | Free slack | Constraint | Work | Actual work | Pending Hours |
| --- | --- | --- | --- | --- | --- | --- | --- | --- | --- | --- | --- | --- | --- | --- | --- |
| 187 | 2.8 | **Module Level Integration & Integration Unit Testing** |  | 29.88d | 2014-07-31 A | 2014-09-10 |  | 60% | 12d | 187d |  |  | 655h | 484.99h | 150 hrs |
| 188 | 2.8.1 | Module Level Integration |  | 5.59d | 2014-07-31 A | 2014-08-07 | 186 | 87% | 0.71d | 3.11d | 0d | start no earlier than 2014-07-31 | 350h | 299.99h | 50 hrs |
| 189 | 2.8.2 | Integration Unit Testing and Bug Fixing |  | 4d | 2014-08-07 A | 2014-08-13 | 188 | 78% | 0.89d | 0.33d | 0d | start no earlier than 2014-08-07 | 180h | 140h | 20 hrs |
| 190 | 2.8.3 | Impact changes on integration time and code management |  | 10d | 2014-08-28 A | 2014-09-10 |  | 40% | 6d | 187d |  | finish no earlier than 2014-09-10 | 50h | 20h | 30 hrs |
| 191 | 2.8.4 | Build Stabilization & Readyness |  | 1d | 2014-08-13 A | 2014-08-14 | 189 | 33% | 0.67d | 1.07d | 0d | start no earlier than 2014-08-13 | 75h | 25h | 50 hrs |
| 192 | 3 | **Testing Phase (Alpha)** |  | 188d | 2014-01-03 A | 2014-09-24 |  | 54% | 86.15d | 177.88d |  |  | 2390h | 1450h |  |
| 193 | 3.1 | **Infrastructure Needs** |  | 5d | 2014-01-19 A | 2014-01-25 A |  | 100% |  |  |  |  | 165h | 165h |  |
| 194 | 3.1.1 | Acquire needed applications and tools |  | 2.12d | 2014-01-19 A | 2014-01-22 A |  | 100% |  |  |  | start no earlier than 2014-01-19 | 25h | 25h |  |
| 195 | 3.1.2 | Setup Testing Environment |  | 1.88d | 2014-01-23 A | 2014-01-24 A |  | 100% |  |  |  | start no earlier than 2014-01-23 | 60h | 60h |  |
| 196 | 3.1.3 | Setup Test Database | milestone | 0d | 2014-01-25 A | 2014-01-25 A |  | 100% |  |  |  | start no earlier than 2014-01-25 | 80h | 80h |  |
| 197 | 3.2 | **Project Reporting Processes** |  | 2d | 2014-01-03 A | 2014-01-07 A |  | 100% |  |  |  |  | 50h | 50h |  |
| 198 | 3.2.1 | Bug Reporting Process Documents |  | 1d | 2014-01-03 A | 2014-01-06 A |  | 100% |  |  |  | start no earlier than 2014-01-03 | 20h | 20h |  |
| 199 | 3.2.2 | Bug Status Tracking Process and Tools Set-up |  | 1d | 2014-01-06 A | 2014-01-07 A | 198 | 100% |  |  |  | start no earlier than 2014-01-06 | 30h | 30h |  |
| 200 | 3.3 | **Integration Testing** |  | 10d | 2014-07-31 A | 2014-08-14 |  | 78% | 2.24d | 0.8d |  |  | 290h | 230h | 60 hrs |
| 201 | 3.3.1 | Identify Integration Testing Guidelines & Checklist |  | 1d | 2014-07-31 A | 2014-08-01 |  | 88% | 0.12d | 6.22d | 0d | start no earlier than 2014-07-31 | 80h | 70h | 10 hrs |
| 202 | 3.3.2 | Integration Testing & Bug Fixing |  | 8d | 2014-08-01 A | 2014-08-13 | 201 | 78% | 1.78d | 0.67d | 0d | start no earlier than 2014-08-01 | 180h | 140h | 40 hrs |
| 203 | 3.3.3 | Publish Integration Testing Results for Final UAT |  | 1d | 2014-08-13 A | 2014-08-14 | 202 | 67% | 0.33d | 0.8d | 0d | start no earlier than 2014-08-13 | 30h | 20h | 10 hrs |
| 204 | 3.4 | **UI Interface Testing** |  | 6d | 2014-08-14 A | 2014-08-22 |  | 79% | 1.27d | 0.67d |  |  | 220h | 175h | 45 hrs |
| 205 | 3.4.1 | Identify UI Interfacing Testing Guidelines & Checklist |  | 1d | 2014-08-14 A | 2014-08-15 | 203 | 80% | 0.2d | 3.43d | 0d | start no earlier than 2014-08-14 | 50h | 40h | 10 hrs |
| 206 | 3.4.2 | UI Testing & Bug Fixing |  | 4d | 2014-08-15 A | 2014-08-21 | 205 | 86% | 0.57d | 0.5d | 0d | start no earlier than 2014-08-15 | 140h | 120h | 20 hrs |
| 207 | 3.4.3 | Publish UI Testing Results for Final UAT |  | 1d | 2014-08-21 A | 2014-08-22 | 206 | 50% | 0.5d | 0.5d | 0d | start no earlier than 2014-08-21 | 30h | 15h | 15 hrs |
| 208 | 3.5 | **Cross Browser Testing** |  | 8d | 2014-08-14 A | 2014-08-26 |  | 68% | 2.54d | 198.88d |  |  | 205h | 140h | 65 hrs |
| 209 | 3.5.1 | Identify Browser Compatibillity Testing Guidelines & Checklist |  | 2d | 2014-08-14 A | 2014-08-18 | 203 | 56% | 0.89d | 3.85d | 0d | start no earlier than 2014-08-14 | 45h | 25h | 20 hrs |
| 210 | 3.5.2 | Cross Browser Testing & Bug Fixing |  | 5d | 2014-08-18 A | 2014-08-25 | 209 | 77% | 1.15d | 0.5d | 0d | start no earlier than 2014-08-18 | 130h | 100h | 30 hrs |
| 211 | 3.5.3 | Publish Cross Browser Testing Results for Final UAT |  | 1d | 2014-08-25 A | 2014-08-26 | 210 | 50% | 0.5d | 198.88d |  | start no earlier than 2014-08-25 | 30h | 15h | 15 hrs |

| ID | WBS | Task | Duration | Start | Finish | Predecessors | Complete | Remaining | Total slack | Free slack | Constraint | Work | Actual work | Pending Hours |
| --- | --- | --- | --- | --- | --- | --- | --- | --- | --- | --- | --- | --- | --- | --- |
| 212 | 3.6 | **Database design Testing** | 10d | 2014-08-22 A | 2014-09-05 |  | 72% | 2.8d | 190.88d |  |  | 320h | 230h | 90 hrs |
| 213 | 3.6.1 | Identify Database Testing Guidelines & Checklist | 1d | 2014-08-22 A | 2014-08-25 | 207 | 67% | 0.33d | 1.5d | 0d | start no earlier than 2014-08-22 | 60h | 40h | 20 hrs |
| 214 | 3.6.2 | Create DB Test Scripts & Test Cases | 4d | 2014-08-25 A | 2014-08-29 | 213 | 75% | 1d | 2.4d | 0d | start no earlier than 2014-08-25 | 80h | 60h | 20 hrs |
| 215 | 3.6.3 | Database Testing & Bug Fixing | 4d | 2014-08-29 A | 2014-09-04 | 214 | 80% | 0.8d | 0.33d | 0d | start no earlier than 2014-08-29 | 150h | 120h | 30 hrs |
| 216 | 3.6.4 | Publish Databsae Design Testing Results for Final UAT | 1d | 2014-09-04 A | 2014-09-05 | 215 | 33% | 0.67d | 190.88d |  | start no earlier than 2014-09-04 | 30h | 10h | 20 hrs |
| 217 | 3.7 | **Security Penetration/Venurability Tests** | 25.12d | 2014-08-04 A | 2014-09-08 |  | 26% | 18.62d | 189.88d |  |  | 385h | 120h | 255 hrs |
| 218 | 3.7.1 | Identify Security/Venurability Testing Guidelines & Checklist | 3d | 2014-08-22 A | 2014-08-27 | 207 | 60% | 1.2d | 197.88d |  | start no earlier than 2014-08-22 | 25h | 15h | 10 hrs |
| 219 | 3.7.2 | Set-up Tools and Required Performance load environments | 3d | 2014-08-25 A | 2014-08-28 | 213 | 50% | 1.5d | 196.88d |  | start no earlier than 2014-08-25 | 50h | 25h | 25 hrs |
| 220 | 3.7.3 | Additional Testing load on New Modules and Functionalities | 8d | 2014-08-04 | 2014-08-13 |  |  |  | 51.12d |  | finish no earlier than 2014-08-13 | 80h |  | 80 hrs |
| 221 | 3.7.4 | Security Testing & Bug Fixing | 6d | 2014-08-29 A | 2014-09-08 | 214 | 40% | 3.6d | 0.8d | 0d | start no earlier than 2014-08-29 | 200h | 80h | 120 hrs |
| 222 | 3.7.5 | Publish Security Penetration/Venurability Testing Results for Final UAT | 2d | 2014-09-04 | 2014-09-08 | 215 |  |  | 34d |  | start no earlier than 2014-09-04 | 30h |  | 30 hrs |
| 223 | 3.8 | **Performance & Load Testing** | 37.12d | 2014-08-04 A | 2014-09-24 |  | 50% | 18.74d | 177.88d |  |  | 370h | 165h | 205 hrs |
| 224 | 3.8.1 | Identify Performance Testing Guidelines & Checklist | 1d | 2014-09-05 A | 2014-09-08 A | 216 | 100% |  |  |  | start no earlier than 2014-09-05 | 10h | 10h | 0 hrs |
| 225 | 3.8.2 | Configure the environment for performance testing | 3d | 2014-09-08 A | 2014-09-11 | 224 | 80% | 0.6d | 3d | 0d | start no earlier than 2014-09-08 | 50h | 40h | 10 hrs |
| 226 | 3.8.3 | Additional Testing load on New Modules and Functionalities | 8d | 2014-08-04 A | 2014-08-13 |  | 50% | 4d | 207d |  | finish no earlier than 2014-08-13 | 80h | 40h | 40 hrs |
| 227 | 3.8.4 | Performance Testing & Bug Fixing | 8d | 2014-09-11 A | 2014-09-23 | 225 | 38% | 5d | 22d | 0d | start no earlier than 2014-09-11 | 200h | 75h | 125 hrs |
| 228 | 3.8.5 | Publish Performance Testing Results for Final UAT | 1d | 2014-09-23 | 2014-09-24 | 227 |  |  | 22d |  | start no earlier than 2014-09-23 | 30h |  | 30 hrs |
| 229 | 3.9 | **Regression Testing** | 37.12d | 2014-08-04 A | 2014-09-24 |  | 43% | 21.25d | 177.88d |  |  | 385h | 175h | 265 hrs |
| 230 | 3.9.1 | Identify Regression Testing Guidelines & Checklist | 1d | 2014-09-08 A | 2014-09-09 | 221 | 80% | 0.2d | 3.75d | 0d | start no earlier than 2014-09-08 | 75h | 60h | 15 hrs |
| 231 | 3.9.2 | Regression Testing & Bug Fixing | 10d | 2014-09-09 A | 2014-09-23 | 230 | 38% | 6.25d | 22d | 0d | start no earlier than 2014-09-09 | 200h | 75h | 25 hrs |
| 232 | 3.9.3 | Additional Testing load on New Modules and Functionalities | 8d | 2014-08-04 A | 2014-08-13 |  | 50% | 4d | 207d |  | finish no earlier than 2014-08-13 | 80h | 40h | 40 hrs |
| 233 | 3.9.4 | Publish Regression Testing Results for Final UAT | 1d | 2014-09-23 | 2014-09-24 | 231 |  |  | 22d |  | start no earlier than 2014-09-23 | 30h |  | 30 hrs |
| 234 | 4 | **Product Migration Phase (Alpha)** | 10d | 2014-08-14 A | 2014-08-28 |  | 36% | 6.4d | 196.29d |  |  | 295h | 110h | 255 hrs |
| 235 | 4.1 | **Identify and Plan Migration Strategy for Existing Clients - Review** | 10d | 2014-08-14 A | 2014-08-28 |  | 36% | 6.4d | 196.29d |  |  | 295h | 110h | 185 hrs |
| 236 | 4.1.1 | Identify the Areas of the Data Required for Migration and their volumes | 2d | 2014-08-14 A | 2014-08-18 | 191 | 53% | 0.93d | 1.33d | 0d | start no earlier than 2014-08-14 | 75h | 40h | 35 hrs |
| 237 | 4.1.2 | Identify the development apporach for migrating data and validate to propose | 4d | 2014-08-18 A | 2014-08-22 | 236 | 33% | 2.67d | 1.2d | 0d | start no earlier than 2014-08-18 | 120h | 40h | 80 hrs |
| 238 | 4.1.3 | Identify BETA Customers & Analyse the customer data Points for Migration | 4d | 2014-08-22 A | 2014-08-28 | 237 | 30% | 2.8d | 196.29d |  | start no earlier than 2014-08-22 | 100h | 30h | 70 hrs |

| ID | WBS | Task | Duration | Start | Finish | Predecessors | Complete | Remaining | Total slack | Free slack | Constraint | Work | Actual work | Pending Hours | Team Members |
| --- | --- | --- | --- | --- | --- | --- | --- | --- | --- | --- | --- | --- | --- | --- | --- |
| 239 | 5 | **Product Deployment Phase (Alpha)** | 13d | 2014-09-16 A | 2014-10-03 |  | 11% | 11.55d | 170.88d |  |  | 380h | 30h | 350 hrs |  |
| 240 | 5.1 | **Deployment Strategy Plan** | 4d | 2014-09-16 A | 2014-09-22 |  | 25% | 3d | 179.88d |  |  | 20h | 5h | 15 hrs |  |
| 241 | 5.1.1 | Design & Review Deployment Strategy for Final Client Signoff | 4d | 2014-09-16 A | 2014-09-22 |  | 25% | 3d | 179.88d |  | start no earlier than 2014-09-16 | 20h | 5h | 15 hrs |  |
| 242 | 5.2 | **Release Readiness Checklist** | 5d | 2014-09-16 A | 2014-09-23 |  | 13% | 4.38d | 0.22d |  |  | 40h | 5h | 35 hrs |  |
| 243 | 5.2.1 | Design and Review to Publish Release Readiness for Client Sign off | 5d | 2014-09-16 A | 2014-09-23 |  | 13% | 4.38d | 0.22d | 0d | start no earlier than 2014-09-16 | 40h | 5h | 35 hrs |  |
| 244 | 5.3 | **Set-up Deployment Infrastructure** | 6d | 2014-09-23 A | 2014-10-01 |  | 16% | 5.07d | 172.88d |  |  | 130h | 20h | 110 hrs |  |
| 245 | 5.3.1 | Identify The Infrastucture Requirements for Procurements | 2d | 2014-09-23 A | 2014-09-25 | 243 | 11% | 1.78d | 0.46d | 0d | start no earlier than 2014-09-23 | 45h | 5h | 35 hrs |  |
| 246 | 5.3.2 | Get Quotes and Estimates From Providers / Infra Details from Client | 3d | 2014-09-25 A | 2014-09-30 | 245 | 15% | 2.54d | 0.25d | 0d | start no earlier than 2014-09-25 | 65h | 10h | 55 hrs |  |
| 247 | 5.3.3 | Analyse the Final Deployment Infrasture for GO-LIVE | 1d | 2014-09-30 A | 2014-10-01 | 246 | 25% | 0.75d | 172.88d |  | start no earlier than 2014-09-30 | 20h | 5h | 15 hrs |  |
| 248 | 5.4 | **GO-LIVE** | 8d | 2014-09-23 | 2014-10-03 |  |  |  | 170.88d |  |  | 190h |  |  |  |
| 249 | 5.4.1 | Prepare the Deployable Code / DB for GOLIVE | 2d | 2014-09-23 | 2014-09-25 |  |  |  | 174.88d | 3d | start no earlier than 2014-09-23 | 50h |  |  |  |
| 250 | 5.4.2 | Environment Set-up for GOLIVE | 1d | 2014-09-30 | 2014-10-01 | 249 |  |  | 171.88d | 0d | start no earlier than 2014-09-30 | 25h |  |  |  |
| 251 | 5.4.3 | Deploy Code on Servers & Configure Initial Settings | 1d | 2014-10-01 | 2014-10-02 | 250 |  |  | 171.88d |  | start no earlier than 2014-10-01 | 40h |  |  |  |
| 252 | 5.4.4 | Deploy all Schedulars and Services for GOLIVE | 1d | 2014-10-01 | 2014-10-02 |  |  |  | 171.88d |  | start no earlier than 2014-10-01 | 25h |  |  |  |
| 253 | 5.4.5 | Smoke Test for final GOLIVE Validation | 2d | 2014-10-01 | 2014-10-03 |  |  |  | 170.88d |  | start no earlier than 2014-10-01 | 40h |  |  |  |
| 254 | 5.4.6 | Publish GOLIVE Notifications | 1d | 2014-10-02 | 2014-10-03 |  |  |  | 170.88d |  | start no earlier than 2014-10-02 | 10h |  |  |  |
| 255 | 6 | **Product Implementation Phase (Beta)** | 254d | 2013-10-25 A | 2014-10-16 |  | 35% | 164.59d | 161.88d |  |  | 5130h | 2030.01h |  |  |
| 256 | 6.1 | **Design / Review Module Moqups** | 38d | 2013-10-25 A | 2013-12-18 A |  | 100% |  |  |  |  | 380h | 380h |  |  |
| 257 | 6.1.1 | Contacts Module Enhancements - Reviews | 6.12d | 2013-10-25 A | 2013-11-04 A |  | 100% |  |  |  | start no earlier than 2013-10-25 | 60h | 60h |  | Nagendra, Spandana, Mahesh, Bharath, Ramana, Hari |
| 258 | 6.1.2 | Opportunities Module Enhancements - Reviews | 7.38d | 2013-11-01 A | 2013-11-12 A |  | 100% |  |  |  | start no earlier than 2013-11-01 | 60h | 60h |  | Nagendra, Spandana, Mahesh, Bharath, Ramana, Hari |
| 259 | 6.1.3 | Marketing Automation - Reviews | 5.75d | 2013-11-12 A | 2013-11-19 A |  | 100% |  |  |  | start no earlier than 2013-11-12 | 75h | 75h |  | Nagendra, Spandana, Mahesh, Bharath, Ramana, Hari |
| 260 | 6.1.4 | Account Dashboard - Reviews | 3d | 2013-11-29 A | 2013-12-04 A |  | 100% |  |  |  | start no earlier than 2013-11-29 | 60h | 60h |  | Nagendra, Spandana, Mahesh, Bharath, Ramana, Hari |
| 261 | 6.1.5 | Reports - Reviews | 6.12d | 2013-12-05 A | 2013-12-13 A |  | 100% |  |  |  | start no earlier than 2013-12-05 | 75h | 75h |  | Nagendra, Spandana, Mahesh, Bharath, Ramana, Hari |
| 262 | 6.1.6 | 3rd Party & External Components Integrations | 3d | 2013-12-13 A | 2013-12-18 A |  | 100% |  |  |  | start no earlier than 2013-12-13 | 50h | 50h |  | Nagendra, Spandana, Mahesh, Bharath, Ramana, Hari |

| ID | WBS | Task | Duration | Start | Finish | Predecessors | Complete | Remaining | Total slack | Free slack | Constraint | Work | Actual work | Team Members | Pending Hours |
| --- | --- | --- | --- | --- | --- | --- | --- | --- | --- | --- | --- | --- | --- | --- | --- |
| 263 | 6.2 | **Finalizing Prototypes & Interface Documents - Business Sign-off** | 47.84d | 2013-11-01 A | 2014-01-07 A |  | 100% |  |  |  |  | 580h | 580h |  |  |
| 264 | 6.2.1 | Contacts Module Enhancements - Review & Update | 5.41d | 2013-11-01 A | 2013-11-08 A | 257 | 100% |  |  |  | start no earlier than 2013-11-01 | 80h | 80h | Nagendra, Spandana, Mahesh, Bharath, Ramana, Hari |  |
| 265 | 6.2.2 | Opportunities Module Enhancements - Review & Update | 5.46d | 2013-11-15 A | 2013-11-22 A |  | 100% |  |  |  | start no earlier than 2013-11-15 | 100h | 100h | Nagendra, Spandana, Mahesh, Bharath, Ramana, Hari |  |
| 266 | 6.2.3 | Marketing Automation - Review & Update | 5.46d | 2013-11-15 A | 2013-11-22 A |  | 100% |  |  |  | start no earlier than 2013-11-15 | 100h | 100h | Nagendra, Spandana, Mahesh, Bharath, Ramana, Hari |  |
| 267 | 6.2.4 | Account Dashboard - Review & Update | 6.08d | 2013-12-20 A | 2013-12-30 A |  | 100% |  |  |  | start no earlier than 2013-12-20 | 90h | 90h | Nagendra, Spandana, Mahesh, Bharath, Ramana, Hari |  |
| 268 | 6.2.5 | Reports - Review and Update | 7.45d | 2013-12-25 A | 2014-01-03 A | 267 | 100% |  |  |  | start no earlier than 2013-12-25 | 110h | 110h | Nagendra, Spandana, Mahesh, Bharath, Ramana, Hari |  |
| 269 | 6.2.6 | 3rd Party & External Components Integrations - Reviews & Update | 3.85d | 2014-01-02 A | 2014-01-07 A | 268 | 100% |  |  |  | start no earlier than 2014-01-02 | 100h | 100h | Nagendra, Spandana, Mahesh, Bharath, Ramana, Hari |  |
| 270 | 6.3 | **Functional Development** | 93.88d | 2014-05-30 A | 2014-10-08 |  | 26% | 69.45d | 167d |  |  | 4050h | 1070.01h |  |  |
| 271 | 6.3.1 | **Design & Develop Contacts Module Enhancements** | 21d | 2014-09-09 A | 2014-10-08 |  | 80% | 4.13d | 167.88d |  |  | 300h | 240h |  | 60 hrs |
| 272 | 6.3.1.1 | Design Review and Finalize Data Model | 2d | 2014-09-09 A | 2014-09-11 A |  | 100% |  |  |  | start no earlier than 2014-09-09 | 25h | 25h | Bharath,NM, Siva Teja, Sri Krishna |  |
| 273 | 6.3.1.2 | Integration of Final UI from Prototypes | 5d | 2014-09-11 A | 2014-09-18 A | 272 | 100% |  |  |  |  | 25h | 25h | Bharath, NM, Siva Teja, Mahesh, Spandana |  |
| 274 | 6.3.1.3 | Development of Module | 12d | 2014-09-18 A | 2014-10-06 | 273 | 76% | 2.93d | 0.4d | 0d |  | 150h | 120h | Bharath, Siva Teja, Mallikarjun, Siva, Avinash, Jeevan | 30 hrs |
| 275 | 6.3.1.4 | Functional Testing of Module | 1d | 2014-10-06 A | 2014-10-07 | 274 | 40% | 0.6d | 0.4d | 0d |  | 40h | 30h | Ramana, Sankeerth, Pramodh, Mamata, Bharath, Siva Teja | 10 hrs |
| 276 | 6.3.1.5 | Bug Fixing & Stabilize code for Contacts | 1d | 2014-10-07 A | 2014-10-08 | 275 | 40% | 0.6d | 167.88d |  |  | 60h | 40h | Ramana, Sankeerth, Pramodh, Mamata, Bharath, Siva Teja | 20 hrs |
| 277 | 6.3.2 | **Design & Develop Marketing Automation Module** | 31d | 2014-08-27 A | 2014-10-08 |  | 14% | 26.56d | 59.12d |  |  | 840h | 140h |  |  |
| 278 | 6.3.2.1 | Design Review and Finalize Data Model | 3d | 2014-08-27 A | 2014-08-29 |  | 67% | 1d | 0.67d | 0d | finish no earlier than 2014-08-29 | 75h | 50h |  | 25 hrs |
| 279 | 6.3.2.2 | Integration of Final UI from Prototypes | 1d | 2014-09-01 A | 2014-09-01 | 278 | 67% | 0.33d | 1.78d | 0d | start no earlier than 2014-02-18 | 75h | 50h |  | 25 hrs |
| 280 | 6.3.2.3 | Development of Module | 20d | 2014-09-02 A | 2014-09-29 | 279 | 9% | 18.22d | 59.12d | 0d | start no earlier than 2014-02-19 | 450h | 40h |  | 410 hrs |
| 281 | 6.3.2.4 | Functional Testing of Module | 5d | 2014-09-30 | 2014-10-06 | 280 |  |  | 59.12d | 0d | start no earlier than 2014-04-02 | 100h |  |  |  |
| 282 | 6.3.2.5 | Bug Fixing & Stabilize code for Marketing Automation | 2d | 2014-10-07 | 2014-10-08 | 281 |  |  | 59.12d |  | start no earlier than 2014-04-09 | 140h |  |  |  |
| 283 | 6.3.3 | **Design & Develop of Opportunities Module Enhancements** | 30d | 2014-07-08 A | 2014-08-19 |  | 49% | 15.4d | 203.88d |  |  | 610h | 520.02h |  | 90 hrs |
| 284 | 6.3.3.1 | Design Review and Finalize Data Model | 2d | 2014-07-08 A | 2014-07-10 |  | 67% | 0.67d | 231.88d |  | start no earlier than 2014-04-02 | 50h | 50h |  | 0 hrs |
| 285 | 6.3.3.2 | Integration of Final UI from Prototypes | 4d | 2014-07-15 A | 2014-07-21 A | 284 | 100% |  |  |  |  | 60h | 60h |  | 0 hrs |
| 286 | 6.3.3.3 | Development of Module | 20d | 2014-07-08 A | 2014-08-05 |  | 5% | 19.08d | 6d | 0d | finish no earlier than 2013-12-23 | 325h | 300.02h |  | 25 hrs |
| 287 | 6.3.3.4 | Functional Testing of Module | 15d | 2014-07-29 A | 2014-08-19 | 286 | 73% | 4d | 203.88d |  |  | 100h | 60h |  | 40 hrs |
| 288 | 6.3.3.5 | Bug Fixing & Stabilize code for Opportunities | 15d | 2014-07-29 A | 2014-08-19 |  | 67% | 5d | 203.88d |  | finish no earlier than 2014-08-21 | 75h | 50h |  | 25 hrs |

| ID | WBS | Task | Duration | Start | Finish | Predecessors | Complete | Remaining | Total slack | Free slack | Constraint | Work | Actual work | Pending Hours |
| --- | --- | --- | --- | --- | --- | --- | --- | --- | --- | --- | --- | --- | --- | --- |
| 289 | 6.3.4 | **Design & Develop Account Dashboard Module** | 92d | 2014-05-30 A | 2014-10-07 |  | 7% | 85.45d | 168.88d |  |  | 950h | 60h | 890 hrs |
| 290 | 6.3.4.1 | Design Review and Finalize Data Model | 2d | 2014-07-22 A | 2014-07-24 |  | 10% | 1.8d | 0d |  | start no earlier than 2014-05-27 | 100h | 10h | 90 hrs |
| 291 | 6.3.4.2 | Integration of Final UI from Prototypes | 39.99d | 2014-05-30 A | 2014-07-25 | 290 |  | 39.86d | 159.01d | 22.01d | start no earlier than 2014-05-29 | 150h | 20h | 130 hrs |
| 292 | 6.3.4.3 | Development of Module | 7d | 2014-08-26 | 2014-09-04 | 291 |  |  | 64d | 3d | start no earlier than 2014-08-26 | 300h |  | 300 hrs |
| 293 | 6.3.4.4 | Change Requests and Enhancements - UI | 10d | 2014-08-26 A | 2014-09-09 |  | 60% | 4d | 154d |  | finish no earlier than 2014-07-11 | 50h | 30h | 20 hrs |
| 294 | 6.3.4.5 | Change Requests and Enhancements - Scope Enhancement | 10d | 2014-08-27 | 2014-09-09 |  |  |  | 80.12d |  | finish no earlier than 2014-09-09 | 100h |  | 100 hrs |
| 295 | 6.3.4.6 | Functional Testing of Module | 10d | 2014-09-09 | 2014-09-23 | 292 |  |  | 61d | 0d | start no earlier than 2014-09-09 | 150h |  | 150 hrs |
| 296 | 6.3.4.7 | Bug Fixing & Stabilize code for Account Dashboard | 10d | 2014-09-23 | 2014-10-07 | 295 |  |  | 61d |  | start no earlier than 2014-06-16 | 100h |  | 100 hrs |
| 297 | 6.3.5 | **Design & Develop Account Reports Module** | 77.12d | 2014-06-20 A | 2014-10-07 |  | 1% | 76.32d | 168.88d |  |  | 1050h | 50h | 1000 hrs |
| 298 | 6.3.5.1 | Design Review and Finalize Data Model | 2d | 2014-07-29 A | 2014-07-31 |  | 25% | 1.5d | 0d |  | start no earlier than 2014-06-17 | 80h | 20h | 60 hrs |
| 299 | 6.3.5.2 | Integration of Final UI from Prototypes | 29.88d | 2014-06-20 A | 2014-07-31 | 298 | 1% | 29.62d | 151.25d | 17.25d | start no earlier than 2014-06-19 | 120h | 30h | 90 hrs |
| 300 | 6.3.5.3 | Development of Module | 20d | 2014-08-26 | 2014-09-23 | 299 |  |  | 61d | 0d | start no earlier than 2014-08-26 | 530h |  | 530 hrs |
| 301 | 6.3.5.4 | Change Requests and Enhancements | 10d | 2014-08-27 | 2014-09-09 |  |  |  | 80.12d |  | finish no earlier than 2014-09-09 | 100h |  | 100 hrs |
| 302 | 6.3.5.5 | Functional Testing of Module | 8d | 2014-09-23 | 2014-10-03 | 300 |  |  | 61d | 0d | start no earlier than 2014-07-18 | 100h |  | 100 hrs |
| 303 | 6.3.5.6 | Bug Fixing & Stabilize code for Reports | 2d | 2014-10-03 | 2014-10-07 | 302 |  |  | 61d |  | start no earlier than 2014-07-24 | 120h |  | 120 hrs |
| 304 | 6.3.6 | **Design & Develop 3rd Party Components and Integrations** | 52.56d | 2014-07-24 A | 2014-10-06 |  | 36% | 33.87d | 169.31d |  |  | 300h | 60h |  |
| 305 | 6.3.6.1 | Design Review and Finalize Data Model | 52d | 2014-07-24 A | 2014-10-06 A |  | 100% |  |  |  | start no earlier than 2014-07-24 | 50h | 50h | 0 hrs |
| 306 | 6.3.6.2 | Integration of Final UI from Prototypes | 47.56d | 2014-07-31 A | 2014-10-06 |  | 3% | 46.36d | 169.31d |  | start no earlier than 2014-07-31 | 25h | 10h | 15 hrs |
| 307 | 6.3.6.3 | Development of Module | 30d | 2014-08-05 | 2014-09-16 |  |  |  | 183.88d |  | start no earlier than 2014-08-05 | 150h |  |  |
| 308 | 6.3.6.4 | Functional Testing of Module | 10d | 2014-09-09 | 2014-09-23 |  |  |  | 178.88d |  | start no earlier than 2014-09-09 | 50h |  |  |
| 309 | 6.3.6.5 | Bug Fixing & Stabilize code for 3rd Party Components & Integrations | 10d | 2014-09-16 | 2014-09-30 |  |  |  | 173.88d |  | start no earlier than 2014-09-16 | 25h |  |  |
| 310 | 6.4 | **Module Level Integration & Integration Unit Testing** | 7d | 2014-10-07 | 2014-10-16 |  |  |  | 157.88d |  |  | 120h |  |  |
| 311 | 6.4.1 | Module Level Integration | 5.59d | 2014-10-07 | 2014-10-14 |  |  |  | 163.29d |  | start no earlier than 2014-10-07 | 80h |  |  |
| 312 | 6.4.2 | Integration Unit Testing and Bug Fixing | 4d | 2014-10-09 | 2014-10-15 |  |  |  | 162.88d |  | start no earlier than 2014-10-09 | 20h |  |  |
| 313 | 6.4.3 | Build Stabilization & Readyness | 1d | 2014-10-15 | 2014-10-16 |  |  |  | 151.88d | 0d | start no earlier than 2014-10-15 | 20h |  |  |

| ID | WBS | Task | Duration | Start | Finish | Predecessors | Complete | Remaining | Total slack | Free slack | Constraint | Work | Actual work | Pending Hours |
| --- | --- | --- | --- | --- | --- | --- | --- | --- | --- | --- | --- | --- | --- | --- |
| 314 | 7 | **Testing Phase (Beta)** | 79d | 2014-09-04 A | 2014-12-23 |  | 1% | 77.88d | 113d |  |  | 805h | 30h |  |
| 315 | 7.1 | **Integration Testing** | 27.88d | 2014-10-07 A | 2014-11-13 |  | 6% | 26.15d | 141d |  |  | 170h | 30h |  |
| 316 | 7.1.1 | Identify Integration Testing Guidelines & Checklist | 1d | 2014-10-07 A | 2014-10-08 |  | 25% | 0.75d | 133d |  | start no earlier than 2014-10-07 | 40h | 10h |  |
| 317 | 7.1.2 | Integration Testing & Bug Fixing | 25.88d | 2014-10-07 A | 2014-11-11 |  | 6% | 24.27d | 108.12d |  | finish no earlier than 2014-11-11 | 100h | 20h |  |
| 318 | 7.1.3 | Publish Integration Testing Results for Final UAT | 3d | 2014-11-11 | 2014-11-13 |  |  |  | 33.12d |  | finish no earlier than 2014-11-13 | 30h |  |  |
| 319 | 7.2 | **UI Interface & Cross Borwser Testing** | 32d | 2014-09-04 | 2014-10-17 |  |  |  | 160d |  |  | 145h |  |  |
| 320 | 7.2.1 | Identify UI Interfacing Testing Guidelines & Checklist | 2d | 2014-09-04 | 2014-09-05 |  |  |  | 165.41d |  | finish no earlier than 2014-09-05 | 20h |  |  |
| 321 | 7.2.2 | UI Testing & Bug Fixing | 30d | 2014-09-04 | 2014-10-15 |  |  |  | 137.41d |  | finish no earlier than 2014-10-15 | 100h |  |  |
| 322 | 7.2.3 | Publish UI Testing Results for Final UAT | 2d | 2014-10-16 | 2014-10-17 |  |  |  | 135.41d |  | finish no earlier than 2014-10-17 | 25h |  |  |
| 323 | 7.3 | **Database design & Load / Performance Testing** | 30d | 2014-10-08 | 2014-11-18 |  |  |  | 138d |  |  | 250h |  |  |
| 324 | 7.3.1 | Identify Database Testing Guidelines & Checklist | 3d | 2014-10-08 | 2014-10-10 |  |  |  | 139.41d |  | finish no earlier than 2014-10-10 | 40h |  |  |
| 325 | 7.3.2 | Create DB Test Scripts & Test Cases | 10d | 2014-10-13 | 2014-10-24 |  |  |  | 129.41d |  | finish no earlier than 2014-10-24 | 60h |  |  |
| 326 | 7.3.3 | Database Testing & Bug Fixing | 20d | 2014-10-20 | 2014-11-14 |  |  |  | 114.41d |  | finish no earlier than 2014-11-14 | 120h |  |  |
| 327 | 7.3.4 | Publish Databsae Design Testing Results for Final UAT | 1d | 2014-11-18 | 2014-11-18 |  |  |  | 112.41d |  | finish no earlier than 2014-11-18 | 30h |  |  |
| 328 | 7.4 | **Regression / UAT Testing** | 32d | 2014-11-10 | 2014-12-23 |  |  |  | 113d |  |  | 240h |  |  |
| 329 | 7.4.1 | Identify Regression Testing Guidelines & Checklist | 2d | 2014-11-18 | 2014-11-19 |  |  |  | 29.12d |  | finish no earlier than 2014-11-19 | 60h |  |  |
| 330 | 7.4.2 | Regression Testing & Bug Fixing | 30d | 2014-11-10 | 2014-12-19 |  |  |  | 7.12d |  | finish no earlier than 2014-12-19 | 150h |  |  |
| 331 | 7.4.3 | Publish Regression Testing Results for Final UAT | 1d | 2014-12-23 | 2014-12-23 |  |  |  | 5.12d |  | finish no earlier than 2014-12-23 | 30h |  |  |
| 332 | 8 | **Product Migration Phase (Beta)** | 47d | 2014-10-16 | 2014-12-22 |  |  |  | 114.88d |  |  | 485h |  |  |
| 333 | 8.1 | **Migration Readiness for Existing Small Clients** | 38.88d | 2014-10-16 | 2014-12-09 |  |  |  | 123d |  |  | 235h |  |  |
| 334 | 8.1.1 | Development of Data Migration Services & Validation Scripts | 2d | 2014-10-16 | 2014-10-20 | 313 |  |  | 44d | 28.88d | start no earlier than 2014-08-14 | 75h |  |  |
| 335 | 8.1.2 | Unit Testing and Data Import on DEV | 4d | 2014-11-28 | 2014-12-03 | 334 |  |  | 123d | 0d | finish no earlier than 2014-12-03 | 80h |  |  |
| 336 | 8.1.3 | Create Stage DB with Migrated Data for Test - UAT / Sign-off | 4d | 2014-12-04 | 2014-12-09 | 335 |  |  | 123d |  | start no earlier than 2014-08-22 | 80h |  |  |
| 337 | 8.2 | **Identify and Plan Migration Strategy for New Clients** | 17d | 2014-11-27 | 2014-12-22 |  |  |  | 109.88d |  |  | 250h |  | 540 hrs |
| 338 | 8.2.1 | Development of Data Migration Services & Validation Scripts | 10d | 2014-11-27 | 2014-12-11 |  |  |  | 2d | 0d | start no earlier than 2014-11-27 | 150h |  |  |
| 339 | 8.2.2 | Unit Testing and Data Import on DEV | 3d | 2014-12-11 | 2014-12-16 | 338 |  |  | 2d | 0d | start no earlier than 2014-09-12 | 60h |  |  |
| 340 | 8.2.3 | Create Stage DB with Migrated Data for Test - UAT / Sign-off | 4d | 2014-12-16 | 2014-12-22 | 339 |  |  | 2d | 0d | start no earlier than 2014-09-17 | 40h |  |  |

| ID | WBS | Task | Duration | Start | Finish | Predecessors | Total slack | Free slack | Constraint | Work | Team Members |
| --- | --- | --- | --- | --- | --- | --- | --- | --- | --- | --- | --- |
| 341 | 9 | **Product Deployment Phase (Beta)** | 7d | 2014-12-22 | 2014-12-31 |  | 107.88d |  |  | 225h |  |
| 342 | 9.1 | **Deployment Strategy Plan** | 4d | 2014-12-22 | 2014-12-26 |  | 110.88d |  |  | 20h |  |
| 343 | 9.1.1 | Design & Review Deployment Strategy for Final Client Signoff | 4d | 2014-12-22 | 2014-12-26 | 340 | 3d |  | start no earlier than 2014-12-19 | 20h |  |
| 344 | 9.2 | **Release Readiness Checklist** | 5d | 2014-12-22 | 2014-12-29 |  | 109.88d |  |  | 40h |  |
| 345 | 9.2.1 | Design and Review to Publish Release Readiness for Client Sign off | 5d | 2014-12-22 | 2014-12-29 | 340 | 2d |  | start no earlier than 2014-12-19 | 40h |  |
| 346 | 9.3 | **GO-LIVE** | 6d | 2014-12-23 | 2014-12-31 |  | 107.88d |  |  | 165h |  |
| 347 | 9.3.1 | Prepare the Deployable Code / DB for GOLIVE | 2d | 2014-12-23 | 2014-12-25 |  | 4d |  | start no earlier than 2014-12-23 | 50h |  |
| 348 | 9.3.2 | Deploy Code on Servers | 1d | 2014-12-23 | 2014-12-24 |  | 4d | 0d | start no earlier than 2014-12-23 | 40h |  |
| 349 | 9.3.3 | Migration of Identified Clients Data to New Application DB | 1d | 2014-12-24 | 2014-12-25 | 348 | 4d |  | start no earlier than 2014-12-24 | 25h |  |
| 350 | 9.3.4 | Smoke Test for final GOLIVE Validation | 2d | 2014-12-26 | 2014-12-30 |  | 35.88d | 0d | start no earlier than 2014-12-26 | 40h |  |
| 351 | 9.3.5 | Publish GOLIVE Notifications | 1d | 2014-12-30 | 2014-12-31 | 350 | 35.88d |  | start no earlier than 2014-12-30 | 10h |  |
| 352 | 10 | **Product Implementation Phase (Live)** | 376.12d | 2013-11-01 | 2015-04-13 |  | 34.88d |  |  | 2626.27h |  |
| 353 | 10.1 | **Design / Review Module Moqups** | 27.62d | 2013-11-08 | 2013-12-18 |  | 377.88d |  |  | 140h |  |
| 354 | 10.1.1 | Change Requests Across Modules | 7.5d | 2013-11-08 | 2013-11-19 |  | 290.12d |  | finish no earlier than 2013-11-19 | 60h | Nagendra, Spandana, Mahesh, Bharath, Ramana, Hari |
| 355 | 10.1.2 | Marketing Automation Change Requests / Enhancements | 5.75d | 2013-11-12 | 2013-11-19 |  | 290.25d |  | start no earlier than 2013-11-12 | 40h | Nagendra, Spandana, Mahesh, Bharath, Ramana, Hari |
| 356 | 10.1.3 | Advanced Entitelemnts - Data Sharing & Roles Builder | 2.88d | 2013-11-26 | 2013-11-28 |  | 283.12d |  | start no earlier than 2013-11-26 | 20h | Nagendra, Spandana, Mahesh, Bharath, Ramana, Hari |
| 357 | 10.1.4 | 3rd Party & External Components Integrations | 3d | 2013-12-13 | 2013-12-18 |  | 270d |  | start no earlier than 2013-12-13 | 20h | Nagendra, Spandana, Mahesh, Bharath, Ramana, Hari |
| 358 | 10.2 | **Finalizing Prototypes & Interface Documents - Business Sign-off** | 36.12d | 2013-11-01 | 2013-12-23 |  | 374.88d |  |  | 279.27h |  |
| 359 | 10.2.1 | Change Requests Across Modules | 16d | 2013-11-01 | 2013-11-22 |  | 360.12d |  | finish no earlier than 2013-11-22 | 50h | Nagendra, Spandana, Mahesh, Bharath, Ramana, Hari |
| 360 | 10.2.2 | Marketing Automation Change Requests / Enhancements | 5.46d | 2013-11-15 | 2013-11-22 |  | 340.01d | 0d | start no earlier than 2013-11-15 | 20h | Nagendra, Spandana, Mahesh, Bharath, Ramana, Hari |
| 361 | 10.2.3 | Advanced Entitelemnts - Data Sharing & Roles Builder | 5.66d | 2013-11-22 | 2013-12-02 | 360 | 340.01d | 0d | start no earlier than 2013-11-22 | 50h | Nagendra, Spandana, Mahesh, Bharath, Ramana, Hari |
| 362 | 10.2.4 | 3rd Party & External Components Integrations | 15d | 2013-12-02 | 2013-12-23 | 361 | 340.01d |  | finish no earlier than 2013-12-20 | 159.27h | Nagendra, Spandana, Mahesh, Bharath, Ramana, Hari |
| 363 | 10.3 | **Application Designing & Development Preparation** | 20d | 2013-12-03 | 2013-12-31 |  | 368.88d |  |  | 275h |  |
| 364 | 10.3.1 | **POC Practices** | 3d | 2013-12-03 | 2013-12-06 |  | 385.88d |  |  | 195h |  |
| 365 | 10.3.1.1 | Identify POC Requirements | 2d | 2013-12-03 | 2013-12-05 |  | 279d |  | start no earlier than 2013-12-03 | 45h | Bharath, NM, Ravi, Sivateja |
| 366 | 10.3.1.2 | Developing POC's | 2d | 2013-12-04 | 2013-12-06 |  | 278d |  | start no earlier than 2013-12-04 | 75h | Bharath, NM, Ravi, Sivateja |
| 367 | 10.3.1.3 | Review and Apporovals of POC's | 2d | 2013-12-04 | 2013-12-06 |  | 278d |  | start no earlier than 2013-12-04 | 75h | Bharath, NM, Ravi, Sivateja |

| ID | WBS | Task | Duration | Start | Finish | Predecessors | Total slack | Free slack | Constraint | Work | Team Members |
| --- | --- | --- | --- | --- | --- | --- | --- | --- | --- | --- | --- |
| 368 | 10.3.2 | **Web UI Application Design Practices** | 9d | 2013-12-18 | 2013-12-31 |  | 368.88d |  |  | 80h |  |
| 369 | 10.3.2.1 | Identify UI Components for Integration and Designing | 4d | 2013-12-18 | 2013-12-24 |  | 261d | 0d | start no earlier than 2013-12-18 | 30h | Bharath, NM, Ravi, Sivateja, Mahesh, Spandana |
| 370 | 10.3.2.2 | Kendo UI - Framwork Update and Integration | 5d | 2013-12-24 | 2013-12-31 | 369 | 261d |  | start no earlier than 2013-12-24 | 50h | Bharath, NM, Ravi, Sivateja, Mahesh, Spandana |
| 371 | 10.4 | **Functional Development** | 339d | 2013-12-24 | 2015-04-13 |  | 34.88d |  |  | 1662h |  |
| 372 | 10.4.1 | **Design & Develop of Change Requests Across All Modules** | 326.88d | 2013-12-24 | 2015-03-25 |  | 47d |  |  | 580h |  |
| 373 | 10.4.1.1 | Design Review and Finalize Data Model | 269.88d | 2013-12-24 | 2015-01-05 |  | 671.75d | 19.12d | start no earlier than 2013-12-24 | 50h | Bharath,NM, Siva Teja, Sri Krishna |
| 374 | 10.4.1.2 | Integration of Final UI from Prototypes | 5d | 2015-02-02 | 2015-02-09 | 373 | 25d | 0d | start no earlier than 2015-02-02 | 75h | Bharath, NM, Siva Teja, Mahesh, Spandana |
| 375 | 10.4.1.3 | Development of Module | 20d | 2015-02-09 | 2015-03-09 | 374 | 652.62d |  |  | 300h | Bharath, Siva Teja, Mallikarjun, Siva, Avinash, Jeevan |
| 376 | 10.4.1.4 | Functional Testing of Module | 20d | 2015-02-25 | 2015-03-25 |  | 640.62d |  | start no earlier than 2015-02-25 | 75h | Ramana, Sankeerth, Pramodh, Mamata, Bharath, Siva Teja |
| 377 | 10.4.1.5 | Bug Fixing & Stabilize code for Contacts | 20d | 2015-02-26 | 2015-03-25 |  | 639.75d |  | finish no earlier than 2015-03-25 | 80h | Ramana, Sankeerth, Pramodh, Mamata, Bharath, Siva Teja |
| 378 | 10.4.2 | **Design & Develop - Enhancements In Marketing Automation Module** | 41d | 2014-12-24 | 2015-02-18 |  | 72d |  |  | 415h |  |
| 379 | 10.4.2.1 | Design Review and Finalize Data Model | 3d | 2014-12-24 | 2014-12-26 |  | 664.75d | 0d | finish no earlier than 2014-12-26 | 50h |  |
| 380 | 10.4.2.2 | Integration of Final UI from Prototypes | 1d | 2014-12-29 | 2014-12-29 | 379 | 664.75d | 0d | start no earlier than 2014-02-18 | 25h |  |
| 381 | 10.4.2.3 | Development of Module | 30d | 2014-12-30 | 2015-02-09 | 380 | 37.12d | 0d | start no earlier than 2014-02-19 | 200h |  |
| 382 | 10.4.2.4 | Functional Testing of Module | 5d | 2015-02-10 | 2015-02-16 | 381 | 37.12d | 0d | start no earlier than 2014-04-02 | 80h |  |
| 383 | 10.4.2.5 | Bug Fixing & Stabilize code for Marketing Automation | 2d | 2015-02-17 | 2015-02-18 | 382 | 37.12d |  | start no earlier than 2014-04-09 | 60h |  |
| 384 | 10.4.3 | **Design & Develop Entitlements Enhancements / Data Sharing** | 29d | 2015-01-06 | 2015-02-16 |  | 74.88d |  |  | 132h |  |
| 385 | 10.4.3.1 | Design Review and Finalize Data Model | 2d | 2015-01-06 | 2015-01-08 |  | 90.88d | 0d | start no earlier than 2015-01-06 | 32h |  |
| 386 | 10.4.3.2 | Integration of Final UI from Prototypes | 1d | 2015-01-08 | 2015-01-09 | 385 | 90.88d | 0d | start no earlier than 2014-06-19 | 20h |  |
| 387 | 10.4.3.3 | Development of Module | 20d | 2015-01-09 | 2015-02-06 | 386 | 90.88d | 0d | start no earlier than 2014-06-20 | 50h |  |
| 388 | 10.4.3.4 | Functional Testing of Module | 4d | 2015-02-06 | 2015-02-12 | 387 | 90.88d | 0d | start no earlier than 2014-07-18 | 20h |  |
| 389 | 10.4.3.5 | Bug Fixing & Stabilize code for Reports | 2d | 2015-02-12 | 2015-02-16 | 388 | 27.88d |  | start no earlier than 2014-07-24 | 10h |  |
| 390 | 10.4.4 | **Design & Develop 3rd Party Components and Integrations** | 80.12d | 2014-12-22 | 2015-04-13 |  | 34.88d |  |  | 535h |  |
| 391 | 10.4.4.1 | Design Review and Finalize Data Model | 20d | 2014-12-22 | 2015-01-16 |  | 0.12d |  | finish no earlier than 2015-01-16 | 75h |  |
| 392 | 10.4.4.2 | Integration of Final UI from Prototypes | 10d | 2015-01-19 | 2015-02-02 | 391 | 17.88d | 0d | start no earlier than 2015-01-19 | 50h |  |
| 393 | 10.4.4.3 | Development of Module | 20d | 2015-02-02 | 2015-03-02 | 392 | 17.88d | 0d | start no earlier than 2014-08-05 | 200h |  |
| 394 | 10.4.4.4 | Functional Testing of Module | 20d | 2015-03-02 | 2015-03-30 | 393 | 17.88d | 0d | start no earlier than 2014-09-09 | 90h |  |
| 395 | 10.4.4.5 | Bug Fixing & Stabilize code for 3rd Party Components & Integrations | 10d | 2015-03-30 | 2015-04-13 | 394 | 17.88d |  | start no earlier than 2014-09-16 | 120h |  |

| ID | WBS | Task | Duration | Start | Finish | Predecessors | Total slack | Free slack | Constraint | Work |
| --- | --- | --- | --- | --- | --- | --- | --- | --- | --- | --- |
| 396 | 10.5 | **Module Level Integration & Integration Unit Testing** | 10.59d | 2015-03-27 | 2015-04-10 |  | 35d |  |  | 270h |
| 397 | 10.5.1 | Module Level Integration | 5.59d | 2015-03-27 | 2015-04-03 |  | 0.12d | 0d | finish no earlier than 2015-04-03 | 150h |
| 398 | 10.5.2 | Integration Unit Testing and Bug Fixing | 4d | 2015-04-06 | 2015-04-09 | 397 | 0.12d | 0d | finish no earlier than 2015-04-03 | 80h |
| 399 | 10.5.3 | Build Stabilization & Readiness | 1d | 2015-04-10 | 2015-04-10 | 398 | 0.12d |  | start no earlier than 2014-08-13 | 40h |
| 400 | 11 | **Testing Phase (Live)** | 76.88d | 2015-01-20 | 2015-05-06 |  | 17d |  |  | 550h |
| 401 | 11.1 | **Integration Testing** | 10d | 2015-01-20 | 2015-02-03 |  | 67.88d |  |  | 150h |
| 402 | 11.1.1 | Identify Integration Testing Guidelines & Checklist | 1d | 2015-01-20 | 2015-01-21 |  | 33d | 0d | start no earlier than 2015-01-20 | 20h |
| 403 | 11.1.2 | Integration Testing & Bug Fixing | 8d | 2015-01-21 | 2015-02-02 | 402 | 33d | 0d | start no earlier than 2014-08-01 | 100h |
| 404 | 11.1.3 | Publish Integration Testing Results for Final UAT | 1d | 2015-02-02 | 2015-02-03 | 403 | 33d | 0d | start no earlier than 2014-08-13 | 30h |
| 405 | 11.2 | **UI / Browser Interface Testing** | 6d | 2015-02-03 | 2015-02-11 |  | 67.88d |  |  | 110h |
| 406 | 11.2.1 | Identify UI Interfacing Testing Guidelines & Checklist | 1d | 2015-02-03 | 2015-02-04 | 404 | 33d | 0d | start no earlier than 2014-08-14 | 10h |
| 407 | 11.2.2 | UI Testing & Bug Fixing | 4d | 2015-02-04 | 2015-02-10 | 406 | 33d | 0d | start no earlier than 2014-08-15 | 80h |
| 408 | 11.2.3 | Publish UI Testing Results for Final UAT | 1d | 2015-02-10 | 2015-02-11 | 407 | 33d | 0d | start no earlier than 2014-08-21 | 20h |
| 409 | 11.3 | **Database design Testing / Load & Performance** | 10d | 2015-02-11 | 2015-02-25 |  | 67.88d |  |  | 160h |
| 410 | 11.3.1 | Identify Database Testing Guidelines & Checklist | 1d | 2015-02-11 | 2015-02-12 | 408 | 33d | 0d | start no earlier than 2014-08-22 | 20h |
| 411 | 11.3.2 | Create DB Test Scripts & Test Cases | 4d | 2015-02-12 | 2015-02-18 | 410 | 33d | 0d | start no earlier than 2014-08-25 | 40h |
| 412 | 11.3.3 | Database Testing & Bug Fixing | 4d | 2015-02-18 | 2015-02-24 | 411 | 33d | 0d | start no earlier than 2014-08-29 | 80h |
| 413 | 11.3.4 | Publish Databsae Design Testing Results for Final UAT | 1d | 2015-02-24 | 2015-02-25 | 412 | 33d |  | start no earlier than 2014-09-04 | 20h |
| 414 | 11.4 | **Regression Testing / UAT** | 12d | 2015-04-21 | 2015-05-06 |  | 17d |  |  | 130h |
| 415 | 11.4.1 | Identify Regression Testing Guidelines & Checklist | 1d | 2015-04-21 | 2015-04-21 |  | 1d | 0d | finish no earlier than 2015-04-21 | 10h |
| 416 | 11.4.2 | Regression Testing & Bug Fixing | 10d | 2015-04-22 | 2015-05-05 | 415 | 1d | 0d | start no earlier than 2014-09-09 | 100h |
| 417 | 11.4.3 | Publish Regression Testing Results for Final UAT | 1d | 2015-05-06 | 2015-05-06 | 416 | 1d |  | start no earlier than 2014-09-23 | 20h |
| 418 | 12 | **Product Deployment Phase (Live)** | 164d | 2014-10-14 | 2015-05-29 |  | 0d |  |  | 195h |
| 419 | 12.1 | **Deployment Strategy Plan** | 4d | 2015-05-05 | 2015-05-08 |  | 15d |  |  | 20h |
| 420 | 12.1.1 | Design & Review Deployment Strategy for Final Client Signoff | 4d | 2015-05-05 | 2015-05-08 |  | 2d |  | finish no earlier than 2015-05-08 | 20h |

| ID | WBS | Task | Duration | Start | Finish | Predecessors | Total slack | Free slack | Constraint | Work |
| --- | --- | --- | --- | --- | --- | --- | --- | --- | --- | --- |
| 421 | 12.2 | **Release Readiness Checklist** | 5d | 2015-05-06 | 2015-05-12 |  | 13d |  |  | 20h |
| 422 | 12.2.1 | Design and Review to Publish Release Readiness for Client Sign off | 5d | 2015-05-06 | 2015-05-12 |  | 13d |  | finish no earlier than 2015-05-12 | 20h |
| 423 | 12.3 | **GO-LIVE** | 164d | 2014-10-14 | 2015-05-29 |  | 0d |  |  | 155h |
| 424 | 12.3.1 | Prepare the Deployable Code / DB for GOLIVE | 2d | 2014-10-14 | 2014-10-15 |  | 162d |  | finish no earlier than 2014-10-15 | 40h |
| 425 | 12.3.2 | Deploy Code on Servers | 1d | 2014-10-15 | 2014-10-16 |  | 160.88d | 155.88d | start no earlier than 2014-10-15 | 40h |
| 426 | 12.3.3 | Migration of Identified Clients Data to New Application DB | 1d | 2015-05-22 | 2015-05-22 | 425 | 5d |  | finish no earlier than 2015-05-22 | 30h |
| 427 | 12.3.4 | Smoke Test for final GOLIVE Validation | 2d | 2015-05-27 | 2015-05-28 |  | 0d |  | finish no earlier than 2015-05-28 | 40h |
| 428 | 12.3.5 | Publish GOLIVE Notifications | 1d | 2015-05-29 | 2015-05-29 | 427 | 0d |  | finish no earlier than 2015-05-29 | 5h |
